# Предварительный план2007

Schedule from MS Project, 2013-04-19 to 2014-09-26, A marks actual dates.

## Calendars

- Стандартный: Mon-Fri 09:00-13:00, 14:00-18:00; Sat-Sun off. Exceptions (off unless hours are given): 2013-05-01 to 2013-05-05 (Первое мая), 2013-05-09 to 2013-05-12 (Девятое мая), 2013-12-30 to 2014-01-08 (новый год), 2014-05-01 to 2014-05-04 (Первое мая 2014), 2014-05-09 to 2014-05-11 (Девятое мая 2014).

## Resources

| Resource |
| --- |
| Шилин Роман |
| Аналитик |
| Андрей Пирожков |
| Тугушев Илья |
| Денис Митавский |
| Алексей Львов |
| Андрей Карандей |
| Валерий Мацукевич |
| Java разработчик3 |
| Java разработчик4 |
| WEB-дизайнер |
| Влад Симоненко |
| Андрей Цветков |
| Java разработчик5 |
| Тест Аналитик |
| Java разработчик6 |
| Тестировщик |
| Технический писатель |
| Технолог - администратор |
| Технический писатель2 |
| Системный аналитик1 |
| Системный аналитик2 |
| Системный аналитик3 |
| Системный аналитик4 |
| Владимир Панов |
| Сергей Кашанский |
| Роман Митинков |
| Роман Болотов |
| Глеб Ноздрачев |
| Евгения Капустина |
| Эдуард Михайлов |
| Тимофей Билый |
| (БТЛ) Михаил Ларин |
| (БТЛ) Олег Еренцов |
| (БТЛ) Дмитрий Лякин |
| (БТЛ)Сергей Степыгин |
| Ярослав Бондарчук |
| Александр Власюк |
| Евгений Баланенко |
| Евгений Сафроненко |
| Сергей Околот |
| Леся Пуховая |
| Наталья Смолянец (Смолянец) |
| Антон Ганчев (Киев) |
| Тимофей Щербатый |
| Пестова Ольга (Киев) |
| Игорь Петров |
| 221 |
| Илья |
| Ардабьев Илья |

## Schedule

| ID | WBS | Task | Type | Duration | Start | Finish | Predecessors | Complete | Remaining | Baseline start | Baseline finish | Baseline duration | Total slack | Free slack | Constraint | Resources | Work | Actual work |
| --- | --- | --- | --- | --- | --- | --- | --- | --- | --- | --- | --- | --- | --- | --- | --- | --- | --- | --- |
| 1 | 1 | **Разработка версии CM4/5** |  | 360d? | 2013-04-19 A | 2014-09-26 |  | 49% | 181.81d? | 2013-04-22 | 2014-09-16 | 351d? | 0d |  |  |  | 35201.4h | 15524.5h |
| 2 | 1.1 | Принято решение о начале разработки | milestone | 0d | 2013-04-22 | 2013-04-22 |  |  |  | 2013-04-22 | 2013-04-22 | 0d | 0d |  | start no earlier than 2013-04-22 |  |  |  |
| 3 | 1.2 | Управление проектом |  | 267d | 2013-04-22 A | 2014-05-21 | 2 | 35% | 173.55d | 2013-04-22 | 2014-05-21 | 267d | 84d |  |  | Шилин Роман | 2136h | 747.6h |
| 4 | 1.3 | **Управление требованиями** |  | 331d | 2013-05-27 A | 2014-09-16 | 2 | 19% | 268.4d | 2013-05-27 | 2014-09-16 | 331d | 8d |  |  | Аналитик | 4567.2h | 1034.44h |
| 5 | 1.3.1 | Выделен аналитик на проект | milestone | 0d | 2013-05-27 A | 2013-05-27 A |  | 100% |  | 2013-05-27 | 2013-05-27 | 0d |  |  | start no earlier than 2013-05-27 |  |  |  |
| 6 | 1.3.2 | Формирование скоупа проекта _ верхний уровень |  | 15d | 2013-05-27 A | 2013-06-14 A | 5 | 100% |  | 2013-05-27 | 2013-06-14 | 15d |  |  |  | Евгения Капустина | 120h | 120h |
| 7 | 1.3.3 | Скоуп на систему сформирован и утвержден | milestone | 0d | 2013-06-21 A | 2013-06-21 A | 6FS+5d | 100% |  | 2013-06-21 | 2013-06-21 | 0d |  |  |  |  |  |  |
| 8 | 1.3.4 | Сопровождение требований |  | 311d | 2013-06-24 A | 2014-09-16 | 5, 7 | 15% | 264.35d | 2013-06-24 | 2014-09-16 | 311d | 3d |  |  | Эдуард Михайлов; Евгения Капустина | 1799.2h | 503.8h |
| 9 | 1.4 | **Создание модуля "Делопроизводство" (документоориентированная среда)** |  | 360d? | 2013-04-19 A | 2014-09-26 |  | 54% | 165.76d? | 2013-04-22 | 2014-08-13 | 327d? | 0d |  |  |  | 28498.2h | 13742.4h |
| 10 | 1.4.1 | Первичные требования для создания модуля "Делопроизводство" подготовлены | milestone | 0d | 2013-04-22 | 2013-04-22 | 2 |  |  | 2013-04-22 | 2013-04-22 | 0d | 0d |  | finish no earlier than 2012-04-02 |  |  |  |
| 11 | 1.4.2 | **Апробация идей прототипа** |  | 24d | 2013-04-29 A | 2013-06-06 |  | 99% | 0d | 2013-04-29 | 2013-06-06 | 24d | 330d |  |  |  | 144h | 144h |
| 12 | 1.4.2.1 | Пирожков доступен | milestone | 0d | 2013-06-03 | 2013-06-03 |  |  |  | 2013-06-03 | 2013-06-03 | 0d | 326d |  | start no earlier than 2013-06-03 |  |  |  |
| 13 | 1.4.2.2 | Проведение предварительных испытаний системы |  | 9d | 2013-04-29 A | 2013-05-16 A | 10FS+5d | 100% |  | 2013-04-29 | 2013-05-16 | 9d |  |  |  | Андрей Цветков | 72h | 72h |
| 14 | 1.4.2.3 | Описание обработки ВХ. Док. На примере технологий прототипа |  | 9d | 2013-05-20 A | 2013-06-06 A |  | 100% |  | 2013-05-20 | 2013-06-06 | 9d |  |  | start no earlier than 2013-05-20 | Андрей Пирожков | 72h | 72h |
| 15 | 1.4.3 | **Настройка инфраструктуры** |  | 37d | 2013-05-20 A | 2013-07-09 | 24 | 67% | 12.33d | 2013-05-20 | 2013-07-09 | 37d | 173d | 0d |  |  | 120h | 80h |
| 16 | 1.4.3.1 | Настройка непрерывной интеграции |  | 4d | 2013-05-20 A | 2013-05-23 A |  | 100% |  | 2013-05-20 | 2013-05-23 | 4d |  |  |  | Тугушев Илья | 32h | 32h |
| 17 | 1.4.3.2 | Поддержка UNIT-тестирования и интеграционного тестирования на уроне среды непрерывной интеграции |  | 5d | 2013-06-04 | 2013-06-10 |  |  |  | 2013-06-04 | 2013-06-10 | 5d | 186d |  | start no earlier than 2013-06-04 | Тугушев Илья | 40h |  |
| 18 | 1.4.3.3 | Репакеджинг проекта |  | 3d | 2013-05-27 A | 2013-05-29 A |  | 100% |  | 2013-05-27 | 2013-05-29 | 3d |  |  | start no earlier than 2013-05-27 | Сергей Кашанский | 24h | 24h |
| 19 | 1.4.3.4 | Автоматическое заполнение параметров JDBC через Maven |  | 3d | 2013-07-05 A | 2013-07-09 A | 30 | 100% |  | 2013-07-05 | 2013-07-09 | 3d |  |  |  | Андрей Цветков | 24h | 24h |
| 20 | 1.4.4 | **Проектирование и формирование ядра системы** |  | 327d? | 2013-04-22 A | 2014-08-13 | 10 | 69% | 102.99d? | 2013-04-22 | 2014-08-13 | 327d? | 32d |  |  |  | 18222.2h | 11779.2h |
| 21 | 1.4.4.1 | **Определение структуры модуля Делопроизводство** |  | 25d | 2013-04-22 A | 2013-05-31 A |  | 100% |  | 2013-04-22 | 2013-05-31 | 25d |  |  |  |  | 352h | 352h |
| 22 | 1.4.4.1.1 | Разбивка на слои |  | 5d | 2013-04-22 A | 2013-04-26 A |  | 100% |  | 2013-04-22 | 2013-04-26 | 5d |  |  |  | Денис Митавский [50%]; Андрей Пирожков [50%] | 40h | 40h |
| 23 | 1.4.4.1.2 | Конфигурации, загрузка и инициализация системы в базовой конфигурации |  | 5d | 2013-04-29 A | 2013-05-08 A | 22 | 100% |  | 2013-04-29 | 2013-05-08 | 5d |  |  |  | Валерий Мацукевич; Денис Митавский [50%] | 60h | 60h |
| 24 | 1.4.4.1.3 | Базовая конфигурация объектов системы |  | 5d | 2013-05-13 A | 2013-05-17 A | 22, 23 | 100% |  | 2013-05-13 | 2013-05-17 | 5d |  |  |  | Денис Митавский [50%]; Валерий Мацукевич | 60h | 60h |
| 25 | 1.4.4.1.4 | Юнит-тестирование - базис |  | 6d | 2013-05-17 A | 2013-05-24 A | 13 | 100% |  | 2013-05-17 | 2013-05-24 | 6d |  |  |  | Денис Митавский [50%]; Андрей Цветков | 72h | 72h |
| 26 | 1.4.4.1.5 | Базовая имплементация слоя DAO |  | 5d | 2013-05-20 A | 2013-05-24 A | 24 | 100% |  | 2013-05-20 | 2013-05-24 | 5d |  |  |  | Валерий Мацукевич | 40h | 40h |
| 27 | 1.4.4.1.6 | Обеспечение программных компонет верификации первой очереди |  | 5d | 2013-05-27 A | 2013-05-31 A | 26 | 100% |  | 2013-05-27 | 2013-05-31 | 5d |  |  |  | Валерий Мацукевич; Андрей Цветков | 80h | 80h |

Notes:
- 27: UNIT тестирование в рамках наработанного кода

| ID | WBS | Task | Type | Duration | Start | Finish | Predecessors | Complete | Remaining | Baseline start | Baseline finish | Baseline duration | Total slack | Constraint | Resources | Work | Actual work |
| --- | --- | --- | --- | --- | --- | --- | --- | --- | --- | --- | --- | --- | --- | --- | --- | --- | --- |
| 28 | 1.4.4.2 | **DAO** |  | 43d? | 2013-06-03 A | 2013-07-31 A | 26, 27 | 100% |  | 2013-06-03 | 2013-07-31 | 43d? |  |  |  | 224h | 224h |
| 29 | 1.4.4.2.1 | DAO для бизнес-объектов |  | 7d | 2013-06-03 A | 2013-06-11 A |  | 100% |  | 2013-06-03 | 2013-06-11 | 7d |  |  | Валерий Мацукевич | 56h | 56h |
| 30 | 1.4.4.2.2 | DAO для коллекций |  | 13d | 2013-06-12 A | 2013-07-04 A | 29 | 100% |  | 2013-06-12 | 2013-07-04 | 13d |  |  | Андрей Цветков | 104h | 104h |
| 31 | 1.4.4.2.3 | Функционал системы готов для проведения проектирования интеграции с GUI СМ4 | milestone | 0d | 2013-06-24 A | 2013-06-24 A | 29, 30 | 100% |  | 2013-06-24 | 2013-06-24 | 0d |  |  |  |  |  |
| 32 | 1.4.4.2.4 | DAO - утилитарные поля |  | 6d | 2013-06-25 A | 2013-07-08 A | 30 | 100% |  | 2013-06-25 | 2013-07-08 | 6d |  |  | Денис Митавский [50%] | 24h | 24h |
| 33 | 1.4.4.2.5 | DAO - кэш уровня транзакции |  | 5d? | 2013-07-25 A | 2013-07-31 A | 409 | 100% |  | 2013-07-25 | 2013-07-31 | 5d? |  |  | Влад Симоненко | 40h | 40h |
| 34 | 1.4.4.3 | CRUD-сервис для бизнес-объектов |  | 10d | 2013-06-11 A | 2013-06-24 A | 30FF | 100% |  | 2013-06-11 | 2013-06-24 | 10d |  |  | Андрей Цветков | 80h | 80h |
| 35 | 1.4.4.4 | Расширение CRUD для интеграции с CMJ |  | 5d | 2013-08-08 A | 2013-08-14 A |  | 100% |  | 2013-08-08 | 2013-08-14 | 5d |  | start no earlier than 2013-08-08 | Андрей Карандей | 40h | 40h |
| 36 | 1.4.4.5 | Поддержка отсортированных дочерних бизнес-объектов |  | 5d | 2013-08-21 | 2013-08-27 | 53 |  |  | 2013-08-21 | 2013-08-27 | 5d | 264d |  | Валерий Мацукевич | 40h |  |
| 37 | 1.4.4.6 | Настройка Datasources/Jaas сервера приложений средствами Maven |  | 2d | 2013-07-05 A | 2013-07-08 A | 30 | 100% |  | 2013-07-05 | 2013-07-08 | 2d |  |  | Сергей Кашанский | 16h | 16h |
| 38 | 1.4.4.7 | Рефакторинг |  | 4d | 2013-07-03 A | 2013-07-08 A | 26 | 100% |  | 2013-07-03 | 2013-07-08 | 4d |  | start no earlier than 2013-07-03 | Валерий Мацукевич | 32h | 32h |
| 39 | 1.4.4.8 | **Права доступа** |  | 65d | 2013-06-12 A | 2013-09-10 |  | 90% | 6.54d | 2013-06-12 | 2013-09-10 | 65d | 262d |  |  | 488h | 426.8h |
| 40 | 1.4.4.8.1 | Права - оптимизация хранения (проектирование) |  | 30d | 2013-06-12 A | 2013-07-23 A | 29 | 100% |  | 2013-06-12 | 2013-07-23 | 30d |  |  | Андрей Пирожков [50%] | 120h | 120h |
| 41 | 1.4.4.8.2 | Описание существующими декларативными средствами конфигурации |  | 19d | 2013-07-16 A | 2013-08-09 A | 40, 19 | 100% |  | 2013-07-16 | 2013-08-09 | 19d |  |  | Андрей Цветков | 152h | 152h |
| 42 | 1.4.4.8.3 | Автофильтрация |  | 10d | 2013-07-29 A | 2013-08-16 A | 41 | 100% |  | 2013-07-29 | 2013-08-16 | 10d |  |  | Андрей Цветков | 80h | 80h |
| 43 | 1.4.4.8.4 | Пересчёт прав доступа |  | 17d | 2013-08-19 A | 2013-09-10 | 42 | 55% | 7.65d | 2013-08-19 | 2013-09-10 | 17d | 254d |  | Андрей Цветков | 136h | 74.8h |
| 44 | 1.4.4.9 | **Workflow - интеграция с Activiti** |  | 91d | 2013-06-07 A | 2013-10-11 A | 14 | 100% |  | 2013-06-07 | 2013-10-11 | 91d |  |  |  | 344h | 344h |
| 45 | 1.4.4.9.1 | Проектирование |  | 10d | 2013-06-07 A | 2013-07-24 A | 40 | 100% |  | 2013-06-07 | 2013-07-24 | 10d |  |  | Андрей Пирожков [50%] | 40h | 40h |
| 46 | 1.4.4.9.2 | готова постановка по БП | milestone | 0d | 2013-09-09 A | 2013-09-09 A |  | 100% |  | 2013-09-09 | 2013-09-09 | 0d |  | start no earlier than 2013-09-09 |  |  |  |
| 47 | 1.4.4.9.3 | Разработка |  | 20d | 2013-09-16 A | 2013-10-11 A | 45, 46 | 100% |  | 2013-09-16 | 2013-10-11 | 20d |  | start no earlier than 2013-09-16 | (БТЛ) Михаил Ларин | 160h | 160h |
| 48 | 1.4.4.9.4 | **Действия** |  | 18d | 2013-09-18 A | 2013-10-11 A |  | 100% |  | 2013-09-18 | 2013-10-11 | 18d |  |  |  | 144h | 144h |
| 49 | 1.4.4.9.4.1 | Концепция/Архитектура |  | 4d | 2013-09-18 A | 2013-09-23 A | 435 | 100% |  | 2013-09-18 | 2013-09-23 | 4d |  | start no earlier than 2013-09-16 | Денис Митавский | 32h | 32h |
| 50 | 1.4.4.9.4.2 | Реализация |  | 14d | 2013-09-24 A | 2013-10-11 A | 49 | 100% |  | 2013-09-24 | 2013-10-11 | 14d |  |  | (БТЛ) Михаил Ларин | 112h | 112h |
| 51 | 1.4.4.10 | **Наследование ???** |  | 8d | 2013-08-09 A | 2013-08-20 A | 45 | 100% |  | 2013-08-09 | 2013-08-20 | 8d |  |  | Андрей Пирожков [50%] | 88h | 88h |
| 52 | 1.4.4.10.1 | Проектирование функции "Наследование" |  | 2d | 2013-08-09 A | 2013-08-12 A |  | 100% |  | 2013-08-09 | 2013-08-12 | 2d |  | finish no earlier than 2013-08-12 | Андрей Пирожков | 16h | 16h |
| 53 | 1.4.4.10.2 | Разработка функции "Наследование" |  | 6d | 2013-08-13 A | 2013-08-20 A | 52 | 100% |  | 2013-08-13 | 2013-08-20 | 6d |  |  | Валерий Мацукевич | 48h | 48h |

Notes:
- 34: - проектирование базового API / - имплементация
- 36: Для отображени и поддержания заданного порядка следования объектов
- 40: Права доступа - оптимизация подхода, / подбор других названий сущностей (таблицы) переименовать таблицы и улучшить производительность
- 41: Права доступа - описание существующими декларативными средствами конфигурации / (для автоматического создания таблиц) + / конфигурирование под-запроса для фильтрации - там же
- 42: Права доступа - авто-фильтрация / + "внедрение в под-запросы"
- 44: Задачи: / - модель процесса (BPMN) / - Имплементация WF - сервиса , взаимодействие системы с Аctiviti
- 51: Архитектура - форма хранения данных (с учетом производительности) / Наследование типов объектов - уровень DAO

| ID | WBS | Task | Type | Duration | Start | Finish | Predecessors | Complete | Remaining | Baseline start | Baseline finish | Baseline duration | Total slack | Free slack | Constraint | Resources | Work | Actual work |
| --- | --- | --- | --- | --- | --- | --- | --- | --- | --- | --- | --- | --- | --- | --- | --- | --- | --- | --- |
| 54 | 1.4.4.11 | **Коллекции** |  | 103d | 2013-05-29 A | 2013-10-18 |  | 56% | 45.06d | 2013-05-29 | 2013-10-18 | 103d | 234d |  |  |  | 300h | 188h |
| 55 | 1.4.4.11.1 | Коллекции - конфигурация |  | 3d | 2013-05-29 A | 2013-05-31 A |  | 100% |  | 2013-05-29 | 2013-05-31 | 3d |  |  |  | Денис Митавский | 24h | 24h |
| 56 | 1.4.4.11.2 | DAO - язык запросов коллекций |  | 12d | 2013-05-29 A | 2013-06-17 A | 55 | 100% |  | 2013-05-29 | 2013-06-17 | 12d |  |  |  | Сергей Кашанский; Денис Митавский [50%] | 140h | 140h |
| 57 | 1.4.4.11.3 | Сервис получения и получения счетчиков |  | 3d | 2013-05-29 A | 2013-05-31 A | 55 | 100% |  | 2013-05-29 | 2013-05-31 | 3d |  |  |  | Сергей Кашанский | 24h | 24h |
| 58 | 1.4.4.11.4 | Принято решение о работе с ПКД | milestone | 0d | 2013-10-01 | 2013-10-01 |  |  |  | 2013-10-01 | 2013-10-01 | 0d | 234d | 0d | start no earlier than 2013-10-01 | Денис Митавский [50%] |  |  |
| 59 | 1.4.4.11.5 | ПКД ???? |  | 14d | 2013-10-01 | 2013-10-18 | 56, 51, 58 |  |  | 2013-10-01 | 2013-10-18 | 14d | 234d |  |  | Валерий Мацукевич | 112h |  |
| 60 | 1.4.4.12 | **Бизнес-объекты (иерархии доменных объектов)** |  | 56.25d | 2013-07-24 A | 2013-10-10 |  | 90% | 5.79d | 2013-07-24 | 2013-10-10 | 56.25d | 240.75d |  |  |  | 228.8h | 200h |
| 61 | 1.4.4.12.1 | Проектирование |  | 8d | 2013-07-24 A | 2013-08-16 A | 62SF, 52 | 100% |  | 2013-07-24 | 2013-08-16 | 8d |  |  |  | Андрей Пирожков [20%] | 12.8h | 12.8h |
| 62 | 1.4.4.12.2 | Реализация1 |  | 3d | 2013-07-31 A | 2013-08-02 A | 433SF | 100% |  | 2013-07-31 | 2013-08-02 | 3d |  |  |  | Андрей Пирожков | 24h | 24h |
| 63 | 1.4.4.12.3 | Подготовка описания по обновленным принциапам работы |  | 24d | 2013-08-16 A | 2013-10-10 | 61 | 85% | 3.6d | 2013-08-16 | 2013-10-10 | 24d | 232.75d |  |  | Андрей Пирожков | 192h | 163.2h |
| 64 | 1.4.4.13 | **Поиск** |  | 151d | 2013-07-30 A | 2014-03-07 | 34 | 94% | 9.78d | 2013-07-30 | 2014-03-07 | 151d | 142d |  |  |  | 630h | 598.4h |
| 65 | 1.4.4.13.1 | Идея поиска оформлена | milestone | 0d | 2013-09-09 A | 2013-09-09 A |  | 100% |  | 2013-09-09 | 2013-09-09 | 0d |  |  | finish no earlier than 2013-09-09 |  |  |  |
| 66 | 1.4.4.13.2 | Поиск |  | 43d | 2013-07-30 A | 2013-11-06 A | 65 | 100% |  | 2013-07-30 | 2013-11-06 | 43d |  |  |  | Андрей Пирожков [50%]; Андрей Цветков | 264h | 264h |
| 67 | 1.4.4.13.3 | Полнотекстовый поиск |  | 79d | 2013-11-07 A | 2014-03-07 | 65, 66 | 90% | 7.9d | 2013-11-07 | 2014-03-07 | 79d | 142d |  | start no earlier than 2013-11-05 | Андрей Пирожков | 366h | 334.4h |
| 68 | 1.4.4.14 | **Слой сопряжения CMJ server (CM4)** |  | 316d? | 2013-04-22 A | 2014-07-29 |  | 67% | 102.74d? | 2013-08-05 | 2014-07-18 | 239d? | 43d |  |  |  | 9563.44h | 5758.64h |
| 69 | 1.4.4.14.1 | Решение принято и ресурсы достуны | milestone | 0d | 2013-08-05 A | 2013-08-05 A |  | 100% |  | 2013-08-05 | 2013-08-05 | 0d |  |  | start no earlier than 2013-08-05 |  |  |  |
| 70 | 1.4.4.14.2 | Реализация коннекторов к платформе |  | 97.25d | 2013-08-08 A | 2013-12-23 A | 69FS+3d | 100% |  | 2013-08-08 | 2013-12-23 | 97.25d |  |  |  |  |  |  |
| 71 | 1.4.4.14.3 | Описание решения есть. Можно начинать разработку | milestone | 0d | 2013-08-28 A | 2013-08-28 A |  | 100% |  | 2013-08-28 | 2013-08-28 | 0d |  |  | start no earlier than 2013-08-28 |  |  |  |
| 72 | 1.4.4.14.4 | Проработка задания выполнена, можно привлекать разработчиков БТЛ | milestone | 0d | 2013-09-18 A | 2013-09-18 A |  | 100% |  | 2013-09-18 | 2013-09-18 | 0d |  |  | start no earlier than 2013-09-18 |  |  |  |
| 73 | 1.4.4.14.5 | Рефакторинг СМ 4.2.1 выполнен | milestone | 0d | 2013-09-30 A | 2013-09-30 A |  | 100% |  | 2013-09-30 | 2013-09-30 | 0d |  |  | finish no earlier than 2013-09-30 |  |  |  |
| 74 | 1.4.4.14.6 | Структура хранения определена | milestone | 0d | 2013-10-28 A | 2013-10-28 A |  | 100% |  | 2013-10-28 | 2013-10-28 | 0d |  |  | finish no earlier than 2013-10-28 |  |  |  |
| 75 | 1.4.4.14.7 | Проектирование завершено - готовность к интеграции | milestone | 0d | 2013-09-23 A | 2013-09-23 A |  | 100% |  | 2013-09-23 | 2013-09-23 | 0d |  |  | start no earlier than 2013-09-23 |  |  |  |
| 76 | 1.4.4.14.8 | **Интеграция с CMJ по Внутренним Документам** |  | 128d? | 2013-09-23 A | 2014-03-31 A | 75 | 100% |  | 2013-09-23 | 2014-03-31 | 128d? |  |  |  |  | 2488.24h | 2488.24h |
| 77 | 1.4.4.14.8.1 | MapperBuilder |  | 28d | 2013-09-23 A | 2013-10-30 A |  | 100% |  | 2013-09-23 | 2013-10-30 | 28d |  |  | finish no earlier than 2013-10-01 | Александр Власюк | 224h | 224h |
| 78 | 1.4.4.14.8.2 | Уточнение расширенной постановки по MapperBuilder выполнена | milestone | 0d | 2013-09-27 A | 2013-09-27 A |  | 100% |  | 2013-09-27 | 2013-09-27 | 0d |  |  | start no earlier than 2013-09-27 | Тугушев Илья [80%] |  |  |
| 79 | 1.4.4.14.8.3 | Конфиг ДОП СС |  | 1d | 2013-09-25 A | 2013-09-26 A |  | 100% |  | 2013-09-25 | 2013-09-26 | 1d |  |  |  | Глеб Ноздрачев [1%] | 0.08h | 0.08h |
| 80 | 1.4.4.14.8.4 | Mapper СС |  | 2d | 2013-10-31 A | 2013-11-01 A | 77, 79 | 100% |  | 2013-10-31 | 2013-11-01 | 2d |  |  |  | Глеб Ноздрачев [80%] | 12.8h | 12.8h |
| 81 | 1.4.4.14.8.5 | Конфиг ДОП Каталога |  | 3.75d? | 2013-09-24 A | 2013-09-27 A |  | 100% |  | 2013-09-24 | 2013-09-27 | 3.75d? |  |  | start no earlier than 2013-09-24 | Глеб Ноздрачев [80%] | 24h | 24h |
| 82 | 1.4.4.14.8.6 | Mapper Каталога |  | 2d | 2013-12-03 A | 2013-12-04 A | 77, 81, 114 | 100% |  | 2013-12-03 | 2013-12-04 | 2d |  |  |  | Глеб Ноздрачев [80%] | 12.8h | 12.8h |
| 83 | 1.4.4.14.8.7 | Конфиг ДОП Портала |  | 3d? | 2013-09-25 A | 2013-09-27 A |  | 100% |  | 2013-09-25 | 2013-09-27 | 3d? |  |  | start no earlier than 2013-09-25 | Евгений Баланенко | 24h | 24h |
| 84 | 1.4.4.14.8.8 | Mapper Портала |  | 2d | 2013-10-31 A | 2013-11-01 A | 77, 83 | 100% |  | 2013-10-31 | 2013-11-01 | 2d |  |  |  | Тугушев Илья [80%] | 12.8h | 12.8h |
| 85 | 1.4.4.14.8.9 | Конфиг ДОП СО |  | 1d | 2013-09-23 A | 2013-09-23 A |  | 100% |  | 2013-09-23 | 2013-09-23 | 1d |  |  |  | Глеб Ноздрачев [1%] | 0.08h | 0.08h |
| 86 | 1.4.4.14.8.10 | Maper СО |  | 2d | 2013-12-05 A | 2013-12-06 A | 77, 82 | 100% |  | 2013-12-05 | 2013-12-06 | 2d |  |  |  | Глеб Ноздрачев [80%] | 12.8h | 12.8h |
| 87 | 1.4.4.14.8.11 | Конфиг ДОП ВнД |  | 2d | 2013-09-27 A | 2013-10-01 A | 81 | 100% |  | 2013-09-27 | 2013-10-01 | 2d |  |  |  | Глеб Ноздрачев [80%] | 12.8h | 12.8h |

Notes:
- 56: DAO - язык запросов коллекций
- 57: Коллекции - сервис получения и получения счетчиков
- 58: Используя язык запросов коллеций
- 59: Для поддержания реализации избранного, отметок о прочтении и т.д.
- 67: Включая взаимодействие с Solr
- 70: Начальная реализация модуля "документооборот" - замена лотуса

| ID | WBS | Task | Type | Duration | Start | Finish | Predecessors | Complete | Baseline start | Baseline finish | Baseline duration | Constraint | Resources | Work | Actual work |
| --- | --- | --- | --- | --- | --- | --- | --- | --- | --- | --- | --- | --- | --- | --- | --- |
| 88 | 1.4.4.14.8.12 | **Mapper ВнД** |  | 9d | 2014-01-27 A | 2014-02-06 A | 77, 86 | 100% | 2014-01-27 | 2014-02-06 | 9d |  | Александр Власюк | 232h | 232h |
| 89 | 1.4.4.14.8.12.1 | Приступили к выполнению антикризисного плана | milestone | 0d | 2014-01-27 A | 2014-01-27 A |  | 100% | 2014-01-27 | 2014-01-27 | 0d | start no earlier than 2014-01-27 |  |  |  |
| 90 | 1.4.4.14.8.12.2 | Отладка Маппера Поручения |  | 1d | 2014-01-27 A | 2014-01-27 A | 89 | 100% | 2014-01-27 | 2014-01-27 | 1d |  | Александр Власюк | 8h | 8h |
| 91 | 1.4.4.14.8.12.3 | Отладка Маппера исполнения |  | 3d | 2014-01-27 A | 2014-01-29 A | 89 | 100% | 2014-01-27 | 2014-01-29 | 3d |  | Александр Власюк | 24h | 24h |
| 92 | 1.4.4.14.8.12.4 | Вспомогательная коллекция "responce" |  | 3d | 2014-01-27 A | 2014-01-29 A | 89 | 100% | 2014-01-27 | 2014-01-29 | 3d |  | (БТЛ) Михаил Ларин | 24h | 24h |
| 93 | 1.4.4.14.8.12.5 | Отладка мапперов |  | 4d | 2014-01-30 A | 2014-02-04 A | 90, 91 | 100% | 2014-01-30 | 2014-02-04 | 4d |  | Александр Власюк | 32h | 32h |
| 94 | 1.4.4.14.8.12.6 | UI - коллекции (7) |  | 4d | 2014-01-31 A | 2014-02-05 A | 92 | 100% | 2014-01-31 | 2014-02-05 | 4d | finish no earlier than 2014-02-05 | (БТЛ) Михаил Ларин | 32h | 32h |
| 95 | 1.4.4.14.8.12.7 | CollectionProvider методы получения только категорий |  | 5d | 2014-01-31 A | 2014-02-06 A | 92 | 100% | 2014-01-31 | 2014-02-06 | 5d | finish no earlier than 2014-02-06 | (БТЛ) Олег Еренцов | 40h | 40h |
| 96 | 1.4.4.14.8.13 | **Доработка ВнД** |  | 42d | 2014-01-27 A | 2014-03-25 A |  | 100% | 2014-01-27 | 2014-02-17 | 16d |  |  | 224h | 224h |
| 97 | 1.4.4.14.8.13.1 | Поддержка работы с Вложениями |  | 3d | 2014-02-04 A | 2014-02-06 A | 89 | 100% | 2014-02-04 | 2014-02-06 | 3d | finish no earlier than 2014-02-06 | Сергей Околот | 24h | 24h |
| 98 | 1.4.4.14.8.13.2 | Поддержка работы с ReachText |  | 1d | 2014-01-27 A | 2014-01-27 A | 89 | 100% | 2014-01-27 | 2014-01-27 | 1d |  | Тугушев Илья | 8h | 8h |
| 99 | 1.4.4.14.8.13.3 | Правила вычисления дправ доступа - реализация |  | 4d | 2014-02-03 A | 2014-02-06 A | 89, 92 | 100% | 2014-02-03 | 2014-02-06 | 4d | finish no earlier than 2014-02-06 | (БТЛ) Михаил Ларин | 32h | 32h |
| 100 | 1.4.4.14.8.13.4 | Поддержка полнотекстового поиска |  | 6d | 2014-02-07 A | 2014-02-14 A | 97 | 100% | 2014-02-07 | 2014-02-14 | 6d |  | Сергей Околот | 48h | 48h |
| 101 | 1.4.4.14.8.13.5 | Базовый сервис поддержки сценариев (+DOEL) |  | 7d | 2014-02-07 A | 2014-02-17 A | 98, 99 | 100% | 2014-02-07 | 2014-02-17 | 7d |  | (БТЛ) Михаил Ларин | 56h | 56h |
| 102 | 1.4.4.14.8.13.6 | **Перенос Логики работы агентов** |  | 42d | 2014-01-27 A | 2014-03-25 A |  | 100% | 2014-01-27 | 2014-02-07 | 10d |  |  | 56h | 56h |
| 103 | 1.4.4.14.8.13.6.1 | Подбор варианта реализации |  | 7d | 2014-01-27 A | 2014-02-04 A | 89 | 100% | 2014-01-27 | 2014-02-04 | 7d |  | Андрей Пирожков | 56h | 56h |
| 104 | 1.4.4.14.8.13.6.2 | Реализация и отладка переноса логики |  | 35d | 2014-02-05 A | 2014-03-25 A | 103 | 100% | 2014-02-05 | 2014-02-07 | 3d |  |  |  |  |
| 105 | 1.4.4.14.8.14 | Кофиг ДОП СпО |  | 1d | 2013-09-23 A | 2013-09-23 A |  | 100% | 2013-09-23 | 2013-09-23 | 1d |  | Глеб Ноздрачев [1%] | 0.08h | 0.08h |
| 106 | 1.4.4.14.8.15 | Mapper СпО |  | 3d | 2013-11-04 A | 2013-11-06 A | 77, 84 | 100% | 2013-11-04 | 2013-11-06 | 3d |  | Тугушев Илья [80%] | 19.2h | 19.2h |
| 107 | 1.4.4.14.8.16 | Аутентификация |  | 5d | 2014-02-04 A | 2014-02-10 A | 110 | 100% | 2014-02-04 | 2014-02-10 | 5d | start no earlier than 2014-02-04 | Андрей Карандей | 40h | 40h |
| 108 | 1.4.4.14.8.17 | **Настраиваемые коллекции** |  | 83.25d? | 2013-10-01 A | 2014-02-06 A | 81, 87 | 100% | 2013-10-01 | 2014-02-06 | 83.25d? |  |  | 318.4h | 318.4h |
| 109 | 1.4.4.14.8.17.1 | **Системные настройки** |  | 42.25d | 2013-10-01 A | 2013-11-28 A |  | 100% | 2013-10-01 | 2013-11-28 | 42.25d |  |  | 232h | 232h |
| 110 | 1.4.4.14.8.17.1.1 | Builder коллекций |  | 20d | 2013-10-01 A | 2013-10-29 A |  | 100% | 2013-10-01 | 2013-10-29 | 20d | start no earlier than 2013-09-30 | Влад Симоненко | 160h | 160h |
| 111 | 1.4.4.14.8.17.1.2 | XSD-схема XML-настроек |  | 3d | 2013-10-29 A | 2013-11-01 A | 110 | 100% | 2013-10-29 | 2013-11-01 | 3d |  | Влад Симоненко | 24h | 24h |
| 112 | 1.4.4.14.8.17.1.3 | Чтение XML настроек через спец-Mapper |  | 3d | 2013-11-01 A | 2013-11-06 A | 111 | 100% | 2013-11-01 | 2013-11-06 | 3d |  | Влад Симоненко | 24h | 24h |
| 113 | 1.4.4.14.8.17.1.4 | Mapper папок |  | 3d | 2013-11-26 A | 2013-11-28 A |  | 100% | 2013-11-26 | 2013-11-28 | 3d | start no earlier than 2013-11-26 | Андрей Карандей | 24h | 24h |

Notes:
- 95: Реализовать в CollectionProvider методы получения только категорий (searchCategory(…)). Фильтрация для получения категорий должна производиться на уровне SQL / CMFIVE-416
- 101: Поддержка вычисления выражений и работы с доменными объектами
- 102: ТО, что выполнялось на лотусе ....
- 107: Кто первый освободится Власюк или Симоненко
- 110: Получение коллекций платформы в соотв. с конфигурацией [MMM] (знать коллекции платформы)
- 111: XSD-схема XML-настроек [NNN] 3дн (знать XML, XSD)
- 112: Чтение через спец-Mapper [NNN] 3дн (уметь работать с XML-парсером)

| ID | WBS | Task | Type | Duration | Start | Finish | Predecessors | Complete | Baseline start | Baseline finish | Baseline duration | Constraint | Resources | Work | Actual work |
| --- | --- | --- | --- | --- | --- | --- | --- | --- | --- | --- | --- | --- | --- | --- | --- |
| 114 | 1.4.4.14.8.17.2 | **Конфигурация коллекций (логин)** |  | 10d | 2013-11-29 A | 2013-12-12 A | 87 | 100% | 2013-11-29 | 2013-12-12 | 10d |  |  | 80h | 80h |
| 115 | 1.4.4.14.8.17.2.1 | Типовая иерархия кастомных папок (3шт) |  | 5d | 2013-11-29 A | 2013-12-05 A | 113 | 100% | 2013-11-29 | 2013-12-05 | 5d |  | Андрей Карандей | 40h | 40h |
| 116 | 1.4.4.14.8.17.2.2 | Системные настройки для ВнД |  | 5d | 2013-12-06 A | 2013-12-12 A | 115 | 100% | 2013-12-06 | 2013-12-12 | 5d |  | (БТЛ) Олег Еренцов | 40h | 40h |
| 117 | 1.4.4.14.8.17.3 | Проверка работы |  | 1d? | 2013-12-13 A | 2013-12-13 A | 114, 109 | 100% | 2013-12-13 | 2013-12-13 | 1d? |  | Глеб Ноздрачев [80%] | 6.4h | 6.4h |
| 118 | 1.4.4.14.8.17.4 | Конфигурация корневой папки навигатора | milestone | 0d | 2014-02-06 A | 2014-02-06 A |  | 100% | 2014-02-06 | 2014-02-06 | 0d | start no earlier than 2014-02-06 | Глеб Ноздрачев |  |  |
| 119 | 1.4.4.14.8.18 | **Разработка адаптеров для Вн** |  | 21d | 2013-09-30 A | 2013-10-28 A |  | 100% | 2013-09-30 | 2013-10-28 | 21d |  |  | 608h | 608h |
| 120 | 1.4.4.14.8.18.1 | Задание по View и Session поставлена | milestone | 0d | 2013-09-30 A | 2013-09-30 A |  | 100% | 2013-09-30 | 2013-09-30 | 0d | start no earlier than 2013-09-30 | Тугушев Илья [80%] |  |  |
| 121 | 1.4.4.14.8.18.2 | Адаптеры View, Session проектирование |  | 11d | 2013-09-30 A | 2013-10-14 A | 120 | 100% | 2013-09-30 | 2013-10-14 | 11d |  | (БТЛ) Олег Еренцов; (БТЛ)Сергей Степыгин | 176h | 176h |
| 122 | 1.4.4.14.8.18.3 | Разработка логики адаптеров view&session |  | 10d | 2013-10-15 A | 2013-10-28 A | 121 | 100% | 2013-10-15 | 2013-10-28 | 10d |  | (БТЛ) Олег Еренцов; (БТЛ)Сергей Степыгин | 160h | 160h |
| 123 | 1.4.4.14.8.18.4 | Разработка архитектуры дя адаптеров database |  | 5d | 2013-09-30 A | 2013-10-04 A | 120 | 100% | 2013-09-30 | 2013-10-04 | 5d |  | Тугушев Илья [80%] | 32h | 32h |
| 124 | 1.4.4.14.8.18.5 | Разработка адаптеров database |  | 15d | 2013-10-07 A | 2013-10-25 A | 123 | 100% | 2013-10-07 | 2013-10-25 | 15d |  | Александр Власюк | 120h | 120h |
| 125 | 1.4.4.14.8.18.6 | Задание по Database и Document поставлена | milestone | 0d | 2013-10-04 A | 2013-10-04 A | 120FS+5d | 100% | 2013-10-04 | 2013-10-04 | 0d |  | Тугушев Илья [80%] |  |  |
| 126 | 1.4.4.14.8.18.7 | Разработка адаптеров DOCUMENT |  | 15d | 2013-10-07 A | 2013-10-25 A | 123 | 100% | 2013-10-07 | 2013-10-25 | 15d |  | Александр Власюк | 120h | 120h |
| 127 | 1.4.4.14.8.19 | **Разработка коллекций (инициализация)** |  | 56d | 2013-10-29 A | 2014-01-24 A | 122 | 100% | 2013-10-29 | 2014-01-24 | 56d |  |  | 472h | 472h |
| 128 | 1.4.4.14.8.19.1 | Описание полей документов Вн |  | 2d | 2013-10-29 A | 2013-10-30 A |  | 100% | 2013-10-29 | 2013-10-30 | 2d | finish no earlier than 2013-10-28 | Евгений Баланенко | 16h | 16h |
| 129 | 1.4.4.14.8.19.2 | Коллекции Портала |  | 5d | 2013-10-29 A | 2013-11-04 A | 83 | 100% | 2013-10-29 | 2013-11-04 | 5d |  | Евгений Баланенко | 40h | 40h |
| 130 | 1.4.4.14.8.19.3 | Инструктаж по @-формулам проведен | milestone | 0d | 2013-11-04 A | 2013-11-04 A | 129, 121 | 100% | 2013-11-04 | 2013-11-04 | 0d |  | Тугушев Илья [80%] |  |  |
| 131 | 1.4.4.14.8.19.4 | Коллекции СС |  | 5d | 2013-11-05 A | 2013-11-11 A | 129, 128 | 100% | 2013-11-05 | 2013-11-11 | 5d |  | (БТЛ) Олег Еренцов | 40h | 40h |
| 132 | 1.4.4.14.8.19.5 | Коллекции Каталога |  | 5d | 2013-11-05 A | 2013-11-11 A | 129, 81 | 100% | 2013-11-05 | 2013-11-11 | 5d |  | (БТЛ) Дмитрий Лякин | 40h | 40h |
| 133 | 1.4.4.14.8.19.6 | Коллекции СО |  | 5d | 2013-11-05 A | 2013-11-11 A | 129, 85 | 100% | 2013-11-05 | 2013-11-11 | 5d |  | Тугушев Илья [80%] | 32h | 32h |
| 134 | 1.4.4.14.8.19.7 | Коллекции СпО |  | 6d | 2013-11-12 A | 2013-11-19 A | 132 | 100% | 2013-11-12 | 2013-11-19 | 6d |  | (БТЛ) Дмитрий Лякин | 48h | 48h |
| 135 | 1.4.4.14.8.19.8 | **Разработка коллекций (логин)** |  | 16d | 2013-12-24 A | 2014-01-24 A |  | 100% | 2013-12-24 | 2014-01-24 | 16d |  |  | 256h | 256h |
| 136 | 1.4.4.14.8.19.8.1 | Инициализация прошла | milestone | 0d | 2013-12-24 A | 2013-12-24 A |  | 100% | 2013-12-24 | 2013-12-24 | 0d | start no earlier than 2013-12-24 |  |  |  |
| 137 | 1.4.4.14.8.19.8.2 | Определение состава коллекций после инициализации Вн |  | 1d | 2013-12-24 A | 2013-12-24 A | 136 | 100% | 2013-12-24 | 2013-12-24 | 1d | finish no earlier than 2013-10-28 | Тугушев Илья | 8h | 8h |
| 138 | 1.4.4.14.8.19.8.3 | Коллекции Портала |  | 5d | 2013-12-24 A | 2014-01-09 A | 136 | 100% | 2013-12-24 | 2014-01-09 | 5d |  | Евгений Баланенко | 40h | 40h |
| 139 | 1.4.4.14.8.19.8.4 | Коллекции СС |  | 5d | 2014-01-10 A | 2014-01-16 A | 137, 138 | 100% | 2014-01-10 | 2014-01-16 | 5d |  | (БТЛ) Олег Еренцов | 40h | 40h |
| 140 | 1.4.4.14.8.19.8.5 | Коллекции Каталога |  | 5d | 2014-01-10 A | 2014-01-16 A | 138 | 100% | 2014-01-10 | 2014-01-16 | 5d |  | (БТЛ) Дмитрий Лякин | 40h | 40h |
| 141 | 1.4.4.14.8.19.8.6 | Коллекции СО |  | 5d | 2014-01-10 A | 2014-01-16 A | 138 | 100% | 2014-01-10 | 2014-01-16 | 5d |  | Тугушев Илья [80%] | 32h | 32h |
| 142 | 1.4.4.14.8.19.8.7 | Коллекции СпО |  | 6d | 2014-01-17 A | 2014-01-24 A | 140 | 100% | 2014-01-17 | 2014-01-24 | 6d |  | (БТЛ) Дмитрий Лякин | 48h | 48h |
| 143 | 1.4.4.14.8.19.8.8 | Коллекции ВнД |  | 6d | 2014-01-17 A | 2014-01-24 A | 139 | 100% | 2014-01-17 | 2014-01-24 | 6d |  | (БТЛ) Олег Еренцов | 48h | 48h |
| 144 | 1.4.4.14.8.20 | ВнД | milestone | 0d | 2014-02-10 A | 2014-02-10 A | 131, 80, 132, 82, 129, 84, 133, 86, 88, 134, 106, 107, 108, 121 | 100% | 2014-02-10 | 2014-02-10 | 0d |  |  |  |  |

Notes:
- 116: Системные настройки для ВнД (1дескр + 10типов) [NNN] 1 дн
- 117: Х тестовых РКК ВнД [YYY] 2ч
- 128: - документ, описывающий соответствие нотес-полей полям ДОП для модуля ВнД
- 137: - документ, описывающий соответствие нотес-полей полям ДОП для модуля ВнД

| ID | WBS | Task | Type | Duration | Start | Finish | Predecessors | Complete | Baseline start | Baseline finish | Baseline duration | Constraint | Resources | Work | Actual work |
| --- | --- | --- | --- | --- | --- | --- | --- | --- | --- | --- | --- | --- | --- | --- | --- |
| 145 | 1.4.4.14.8.21 | **Преобразование структуры зранения для Поруч и Исп.** |  | 5d | 2014-02-12 A | 2014-02-18 A |  | 100% | 2014-02-12 | 2014-02-18 | 5d |  |  |  |  |
| 146 | 1.4.4.14.8.21.1 | Принято решение по упрощению ДОП | milestone | 0d | 2014-02-12 A | 2014-02-12 A |  | 100% | 2014-02-12 | 2014-02-12 | 0d | start no earlier than 2014-02-12 |  |  |  |
| 147 | 1.4.4.14.8.21.2 | Адаптация ДОП |  | 2d | 2014-02-12 A | 2014-02-13 A | 146 | 100% | 2014-02-12 | 2014-02-13 | 2d |  |  |  |  |
| 148 | 1.4.4.14.8.21.3 | Адаптация коллекций |  | 3d | 2014-02-14 A | 2014-02-18 A | 147 | 100% | 2014-02-14 | 2014-02-18 | 3d |  |  |  |  |
| 149 | 1.4.4.14.8.22 | **Адаптация CMJ-server** |  | 35d | 2014-02-11 A | 2014-03-31 A | 144 | 100% | 2014-02-11 | 2014-03-31 | 35d |  |  | 56h | 56h |
| 150 | 1.4.4.14.8.22.1 | Подмена РБД для CMJ-Server |  | 2d | 2014-02-11 A | 2014-02-12 A |  | 100% | 2014-02-11 | 2014-02-12 | 2d |  | Андрей Карандей | 16h | 16h |
| 151 | 1.4.4.14.8.22.2 | Имплементация аналогов @-функций для Sochi-server |  | 2d | 2014-02-11 A | 2014-02-12 A |  | 100% | 2014-02-11 | 2014-02-12 | 2d |  | (БТЛ) Михаил Ларин | 16h | 16h |
| 152 | 1.4.4.14.8.22.3 | Примененеие механизма замены @-формул |  | 3d | 2014-03-27 A | 2014-03-31 A | 151FS+30d | 100% | 2014-03-27 | 2014-03-31 | 3d |  | Глеб Ноздрачев | 24h | 24h |
| 153 | 1.4.4.14.8.23 | Объединение War |  | 1d | 2014-02-11 A | 2014-02-11 A | 144 | 100% | 2014-02-11 | 2014-02-11 | 1d |  | Тугушев Илья | 8h | 8h |
| 154 | 1.4.4.14.8.24 | **Инструмент заполнения** |  | 4d? | 2014-02-11 A | 2014-02-14 A | 144 | 100% | 2014-02-11 | 2014-02-14 | 4d? |  |  | 174.4h | 174.4h |
| 155 | 1.4.4.14.8.24.1 | **Заливка данных для демонстрации** |  | 4d | 2014-02-11 A | 2014-02-14 A |  | 100% | 2014-02-11 | 2014-02-14 | 4d |  |  | 30.4h | 30.4h |
| 156 | 1.4.4.14.8.24.1.1 | Подготовка задачи |  | 1d | 2014-02-11 A | 2014-02-11 A |  | 100% | 2014-02-11 | 2014-02-11 | 1d |  | Тугушев Илья [80%] | 6.4h | 6.4h |
| 157 | 1.4.4.14.8.24.1.2 | Написание скриптов заливки |  | 3d | 2014-02-12 A | 2014-02-14 A | 156 | 100% | 2014-02-12 | 2014-02-14 | 3d |  | Евгений Сафроненко | 24h | 24h |
| 158 | 1.4.4.14.8.24.2 | Инструмент заполнения Каталога |  | 3d? | 2014-02-11 A | 2014-02-13 A |  | 100% | 2014-02-11 | 2014-02-13 | 3d? |  | Евгений Сафроненко | 24h | 24h |
| 159 | 1.4.4.14.8.24.3 | Инструмент заполнения СС |  | 3d? | 2014-02-11 A | 2014-02-13 A |  | 100% | 2014-02-11 | 2014-02-13 | 3d? |  | Евгений Сафроненко | 24h | 24h |
| 160 | 1.4.4.14.8.24.4 | Инструмент заполнения Портала |  | 3d? | 2014-02-11 A | 2014-02-13 A |  | 100% | 2014-02-11 | 2014-02-13 | 3d? |  | Евгений Сафроненко | 24h | 24h |
| 161 | 1.4.4.14.8.24.5 | Инструмент заполнения СО |  | 3d? | 2014-02-11 A | 2014-02-13 A |  | 100% | 2014-02-11 | 2014-02-13 | 3d? |  | Евгений Сафроненко | 24h | 24h |
| 162 | 1.4.4.14.8.24.6 | Инструмент заполнения СпО |  | 3d? | 2014-02-11 A | 2014-02-13 A |  | 100% | 2014-02-11 | 2014-02-13 | 3d? |  | Евгений Сафроненко | 24h | 24h |
| 163 | 1.4.4.14.8.24.7 | Проверка заполнения |  | 3d | 2014-02-11 A | 2014-02-13 A |  | 100% | 2014-02-11 | 2014-02-13 | 3d |  | Тимофей Щербатый | 24h | 24h |
| 164 | 1.4.4.14.9 | **Интеграция с CMJ по Входящим документам** |  | 44d | 2014-02-06 A | 2014-04-08 A |  | 100% | 2014-02-06 | 2014-04-02 | 40d |  |  | 470.4h | 470.4h |
| 165 | 1.4.4.14.9.1 | Задание выдано | milestone | 0d | 2014-02-06 A | 2014-02-06 A |  | 100% | 2014-02-06 | 2014-02-06 | 0d | start no earlier than 2014-02-06 | Тугушев Илья |  |  |
| 166 | 1.4.4.14.9.2 | Конфиг ДОП |  | 6d | 2014-02-06 A | 2014-02-13 A | 165 | 100% | 2014-02-06 | 2014-02-13 | 6d |  | Глеб Ноздрачев | 48h | 48h |
| 167 | 1.4.4.14.9.3 | Mapper |  | 4.8d | 2014-02-14 A | 2014-02-20 A | 166 | 100% | 2014-02-14 | 2014-02-20 | 4.8d |  | Александр Власюк | 38.4h | 38.4h |
| 168 | 1.4.4.14.9.4 | **Перенос логики сервисов по вхД** |  | 33.2d | 2014-02-20 A | 2014-04-08 A |  | 100% | 2014-02-20 | 2014-04-02 | 29.2d |  |  | 120h | 120h |
| 169 | 1.4.4.14.9.4.1 | Задача поставлена |  | 1d | 2014-02-20 A | 2014-02-21 A | 165, 167 | 100% | 2014-02-20 | 2014-02-21 | 1d |  | Тугушев Илья | 8h | 8h |
| 170 | 1.4.4.14.9.4.2 | Пролведение процедуры Revers Engineering для процессов |  | 10d | 2014-03-26 A | 2014-04-08 A | 169, 104 | 100% | 2014-02-21 | 2014-03-14 | 15.2d |  | Наталья Смолянец (Смолянец) | 80h | 80h |
| 171 | 1.4.4.14.9.4.3 | Реализация в слое CMJ-CMSochi |  | 4d | 2014-04-02 A | 2014-04-07 A | 170SS+5d | 100% | 2014-03-17 | 2014-04-02 | 13d |  | Антон Ганчев (Киев) | 32h | 32h |

Notes:
- 170: Пролведение процедуры Revers Engineering и составлене алгоритма функционирования
- 171: Пнренос логики на java

| ID | WBS | Task | Type | Duration | Start | Finish | Predecessors | Complete | Remaining | Baseline start | Baseline finish | Baseline duration | Total slack | Free slack | Constraint | Resources | Work | Actual work |
| --- | --- | --- | --- | --- | --- | --- | --- | --- | --- | --- | --- | --- | --- | --- | --- | --- | --- | --- |
| 172 | 1.4.4.14.9.5 | **Разработка коллекций** |  | 17d | 2014-02-14 A | 2014-03-10 A | 166 | 100% |  | 2014-02-14 | 2014-03-10 | 17d |  |  |  |  | 264h | 264h |
| 173 | 1.4.4.14.9.5.1 | Коллекции внутрисистемные |  | 9d | 2014-02-14 A | 2014-02-26 A | 166 | 100% |  | 2014-02-14 | 2014-02-26 | 9d |  |  |  | (БТЛ)Сергей Степыгин | 72h | 72h |
| 174 | 1.4.4.14.9.5.2 | Коллекции GUI |  | 10d | 2014-02-14 A | 2014-02-27 A | 166 | 100% |  | 2014-02-14 | 2014-02-27 | 10d |  |  |  | (БТЛ) Дмитрий Лякин | 80h | 80h |
| 175 | 1.4.4.14.9.5.3 | **Настраиваемые коллекции** |  | 7d | 2014-02-28 A | 2014-03-10 A | 174 | 100% |  | 2014-02-28 | 2014-03-10 | 7d |  |  |  |  | 112h | 112h |
| 176 | 1.4.4.14.9.5.3.1 | **Конфигурация коллекций** |  | 4d | 2014-02-28 A | 2014-03-05 A |  | 100% |  | 2014-02-28 | 2014-03-05 | 4d |  |  |  |  | 56h | 56h |
| 177 | 1.4.4.14.9.5.3.1.1 | Типовая иерархия кастомных папок (3шт) |  | 2d | 2014-02-28 A | 2014-03-03 A |  | 100% |  | 2014-02-28 | 2014-03-03 | 2d |  |  |  | (БТЛ) Олег Еренцов | 16h | 16h |
| 178 | 1.4.4.14.9.5.3.1.2 | Системные настройки для Вх |  | 2d | 2014-03-04 A | 2014-03-05 A | 177 | 100% |  | 2014-03-04 | 2014-03-05 | 2d |  |  |  | (БТЛ) Олег Еренцов | 16h | 16h |
| 179 | 1.4.4.14.9.5.3.1.3 | Проверка работы |  | 3d | 2014-02-28 A | 2014-03-04 A |  | 100% |  | 2014-02-28 | 2014-03-04 | 3d |  |  |  | (БТЛ) Олег Еренцов | 24h | 24h |
| 180 | 1.4.4.14.9.5.3.2 | Доработка расширенного поиска |  | 7d | 2014-02-28 A | 2014-03-10 A | 176SS | 100% |  | 2014-02-28 | 2014-03-10 | 7d |  |  |  | Сергей Околот | 56h | 56h |
| 181 | 1.4.4.14.9.6 | Интеграция по Вх выполнена | milestone | 0d | 2014-03-10 A | 2014-03-10 A | 167, 175, 173, 172 | 100% |  | 2014-03-10 | 2014-03-10 | 0d |  |  |  |  |  |  |
| 182 | 1.4.4.14.10 | **Подключение механизма контроля доступа** |  | 23d | 2014-03-20 A | 2014-04-21 |  | 67% | 7.67d | 2014-03-20 | 2014-03-27 | 6d | 110d | 13.2d |  |  | 24h |  |
| 183 | 1.4.4.14.10.1 | Доступность Ноздрачева | milestone | 0d | 2014-03-20 A | 2014-03-20 A |  | 100% |  | 2014-03-20 | 2014-03-20 | 0d |  |  | start no earlier than 2014-03-20 |  |  |  |
| 184 | 1.4.4.14.10.2 | создание типовых матриц доступа |  | 6d | 2014-03-20 A | 2014-03-27 A | 183 | 100% |  | 2014-03-20 | 2014-03-27 | 6d |  |  |  |  |  |  |
| 185 | 1.4.4.14.10.3 | Проверка корректности подключения |  | 3d | 2014-04-17 | 2014-04-21 | 184FS+14d |  |  |  |  |  | 103d |  |  | Глеб Ноздрачев | 24h |  |
| 186 | 1.4.4.14.11 | **Интеграция с CMJ по Договорам** |  | 47.2d | 2014-02-27 A | 2014-05-08 A |  | 100% |  | 2014-02-27 | 2014-04-17 | 35d |  |  |  |  | 496h | 496h |
| 187 | 1.4.4.14.11.1 | Определен исполнитель по составлению конфигураций | milestone | 0d | 2014-02-27 A | 2014-02-27 A | 174 | 100% |  | 2014-02-27 | 2014-02-27 | 0d |  |  |  |  |  |  |
| 188 | 1.4.4.14.11.2 | Проектирование и получение оценки работ |  | 2d | 2014-02-28 A | 2014-03-03 A | 187 | 100% |  | 2014-02-28 | 2014-03-03 | 2d |  |  |  |  |  |  |
| 189 | 1.4.4.14.11.3 | Конфиг ДОП |  | 3d | 2014-03-04 A | 2014-03-06 A | 188 | 100% |  | 2014-03-04 | 2014-03-06 | 3d |  |  | start no earlier than 2014-02-27 | Александр Власюк | 24h | 24h |
| 190 | 1.4.4.14.11.4 | Mapper |  | 6d | 2014-03-07 A | 2014-03-14 A | 189 | 100% |  | 2014-03-07 | 2014-03-14 | 6d |  |  |  | Александр Власюк | 48h | 48h |
| 191 | 1.4.4.14.11.5 | **Настраиваемые коллекции** |  | 17d | 2014-03-17 A | 2014-04-08 A | 190 | 100% |  | 2014-03-17 | 2014-03-25 | 7d |  |  |  |  | 208h | 208h |
| 192 | 1.4.4.14.11.5.1 | **Конфигурация коллекций** |  | 16d | 2014-03-17 A | 2014-04-07 A |  | 100% |  | 2014-03-17 | 2014-03-21 | 5d |  |  |  |  | 144h | 144h |
| 193 | 1.4.4.14.11.5.1.1 | Типовая иерархия кастомных папок (3шт) |  | 8d | 2014-03-17 A | 2014-03-31 A |  | 100% |  | 2014-03-17 | 2014-03-21 | 5d |  |  |  | Евгений Сафроненко; Тимофей Билый | 64h | 64h |
| 194 | 1.4.4.14.11.5.1.2 | Системные настройки для Дгв |  | 5d | 2014-04-01 A | 2014-04-07 A | 193 | 100% |  | 2014-03-17 | 2014-03-21 | 5d |  |  |  | Евгений Сафроненко; Тимофей Билый | 80h | 80h |
| 195 | 1.4.4.14.11.5.2 | Проверка работы |  | 1d | 2014-04-08 A | 2014-04-08 A | 192 | 100% |  | 2014-03-24 | 2014-03-24 | 1d |  |  |  | Тимофей Билый | 8h | 8h |
| 196 | 1.4.4.14.11.5.3 | Доработка расширенного поиска |  | 7d | 2014-03-17 A | 2014-03-25 A | 193SS | 100% |  | 2014-03-17 | 2014-03-25 | 7d |  |  |  | Сергей Околот | 56h | 56h |
| 197 | 1.4.4.14.11.5.4 | Конфигурация для модуля "Договора" получена | milestone | 0d | 2014-03-24 A | 2014-03-24 A | 195 | 100% |  | 2014-03-24 | 2014-03-24 | 0d |  |  |  |  |  |  |

Notes:
- 178: Системные настройки для ВнД (1дескр + 10типов) [NNN] 1 дн
- 179: Х тестовых РКК ВнД [YYY] 2ч
- 194: Системные настройки для ВнД (1дескр + 10типов) [NNN] 1 дн
- 195: Х тестовых РКК ВнД [YYY] 2ч

| ID | WBS | Task | Type | Duration | Start | Finish | Predecessors | Complete | Remaining | Baseline start | Baseline finish | Baseline duration | Total slack | Free slack | Constraint | Resources | Work | Actual work |
| --- | --- | --- | --- | --- | --- | --- | --- | --- | --- | --- | --- | --- | --- | --- | --- | --- | --- | --- |
| 198 | 1.4.4.14.11.6 | **Перенос логики сервисов по Дгв** |  | 14d | 2014-04-16 A | 2014-05-08 A |  | 100% |  | 2014-04-03 | 2014-04-17 | 11d |  |  |  |  | 168h | 168h |
| 199 | 1.4.4.14.11.6.1 | Задача поставлена |  | 1d | 2014-05-07 A | 2014-05-08 A |  | 100% |  | 2014-04-03 | 2014-04-03 | 1d |  |  |  | Тугушев Илья | 8h | 8h |
| 200 | 1.4.4.14.11.6.2 | Пролведение процедуры Revers Engineering для процессов |  | 10d | 2014-04-16 A | 2014-04-30 A | 170 | 100% |  | 2014-04-04 | 2014-04-17 | 10d |  |  |  | Наталья Смолянец (Смолянец) | 80h | 80h |
| 201 | 1.4.4.14.11.6.3 | Реализация в слое CMJ-CMSochi |  | 10d | 2014-04-16 A | 2014-04-30 A | 200SS | 100% |  | 2014-04-04 | 2014-04-17 | 10d |  |  |  | Антон Ганчев (Киев) | 80h | 80h |
| 202 | 1.4.4.14.11.7 | **Разработка коллекций** |  | 6d | 2014-03-11 A | 2014-03-18 A |  | 100% |  | 2014-03-06 | 2014-03-18 | 9d |  |  |  |  | 48h | 48h |
| 203 | 1.4.4.14.11.7.1 | Коллекции |  | 6d | 2014-03-11 A | 2014-03-18 A | 176, 180 | 100% |  | 2014-03-06 | 2014-03-18 | 9d |  |  |  | (БТЛ) Дмитрий Лякин | 48h | 48h |
| 204 | 1.4.4.14.11.8 | Интеграция по Дгв выполнена | milestone | 0d | 2014-04-08 A | 2014-04-08 A | 190, 191, 203 | 100% |  | 2014-03-25 | 2014-03-25 | 0d |  |  |  |  |  |  |
| 205 | 1.4.4.14.12 | **Интеграция с CMJ по Исходящие документам** |  | 45.2d | 2014-03-07 A | 2014-05-14 A | 144 | 100% |  | 2014-03-07 | 2014-04-28 | 37d |  |  |  |  | 516.8h | 516.8h |
| 206 | 1.4.4.14.12.1 | Конфиг ДОП |  | 3d | 2014-03-07 A | 2014-03-11 A | 189, 197 | 100% |  | 2014-03-07 | 2014-03-11 | 3d |  |  |  | Александр Власюк | 24h | 24h |
| 207 | 1.4.4.14.12.2 | Mapper |  | 7d | 2014-03-12 A | 2014-03-20 A | 206 | 100% |  | 2014-03-12 | 2014-03-20 | 7d |  |  |  | Александр Власюк | 56h | 56h |
| 208 | 1.4.4.14.12.3 | **Настраиваемые коллекции** |  | 8d | 2014-03-12 A | 2014-03-21 A |  | 100% |  | 2014-03-12 | 2014-03-21 | 8d |  |  |  |  | 108.8h | 108.8h |
| 209 | 1.4.4.14.12.3.1 | **Конфигурация коллекций** |  | 6d | 2014-03-12 A | 2014-03-19 A |  | 100% |  | 2014-03-12 | 2014-03-19 | 6d |  |  |  |  | 96h | 96h |
| 210 | 1.4.4.14.12.3.1.1 | Типовая иерархия кастомных папок (3шт) |  | 6d | 2014-03-12 A | 2014-03-19 A | 206 | 100% |  | 2014-03-12 | 2014-03-19 | 6d |  |  |  | Евгений Сафроненко | 48h | 48h |
| 211 | 1.4.4.14.12.3.1.2 | Системные настройки для Исх |  | 6d | 2014-03-12 A | 2014-03-19 A | 210SS | 100% |  | 2014-03-12 | 2014-03-19 | 6d |  |  |  | Тимофей Билый | 48h | 48h |
| 212 | 1.4.4.14.12.3.2 | Проверка работы |  | 2d | 2014-03-20 A | 2014-03-21 A | 209 | 100% |  | 2014-03-20 | 2014-03-21 | 2d |  |  |  | Глеб Ноздрачев [80%] | 12.8h | 12.8h |
| 213 | 1.4.4.14.12.4 | **Перенос логики сервисов по Исх** |  | 7d | 2014-04-30 A | 2014-05-14 A | 207 | 100% |  | 2014-04-17 | 2014-04-28 | 7d |  |  |  |  | 112h | 112h |
| 214 | 1.4.4.14.12.4.1 | Задание поставлено | milestone | 0d | 2014-04-30 A | 2014-04-30 A | 201 | 100% |  | 2014-04-17 | 2014-04-17 | 0d |  |  | start no earlier than 2013-09-30 | Тугушев Илья [80%] |  |  |
| 215 | 1.4.4.14.12.4.2 | Пролведение процедуры Revers Engineering для процессов |  | 7d | 2014-04-30 A | 2014-05-14 A | 214 | 100% |  | 2014-04-18 | 2014-04-28 | 7d |  |  |  | Наталья Смолянец (Смолянец) | 56h | 56h |
| 216 | 1.4.4.14.12.4.3 | Реализация в слое CMJ-CMSochi |  | 7d | 2014-04-30 A | 2014-05-14 A | 215SS | 100% |  | 2014-04-18 | 2014-04-28 | 7d |  |  |  | Антон Ганчев (Киев) | 56h | 56h |
| 217 | 1.4.4.14.12.5 | **Разработка коллекций** |  | 9d | 2014-03-19 A | 2014-03-31 A |  | 100% |  | 2014-03-19 | 2014-03-31 | 9d |  |  |  |  | 216h | 216h |
| 218 | 1.4.4.14.12.5.1 | Коллекции |  | 9d | 2014-03-19 A | 2014-03-31 A | 203 | 100% |  | 2014-03-19 | 2014-03-31 | 9d |  |  |  | (БТЛ) Олег Еренцов; (БТЛ) Дмитрий Лякин; (БТЛ)Сергей Степыгин | 216h | 216h |
| 219 | 1.4.4.14.12.6 | Интеграция по Исх выполнена | milestone | 0d | 2014-03-31 A | 2014-03-31 A | 207, 208, 218 | 100% |  | 2014-03-31 | 2014-03-31 | 0d |  |  |  |  |  |  |
| 220 | 1.4.4.14.13 | **Переход на 4.3 CMJ** |  | 24d | 2014-03-19 A | 2014-04-21 |  | 55% | 10.91d | 2014-03-19 | 2014-06-05 | 54d | 101d | 0d |  |  | 448h | 264h |
| 221 | 1.4.4.14.13.1 | **Модификация CMJ** |  | 15d | 2014-03-19 A | 2014-04-08 A |  | 100% |  | 2014-03-19 | 2014-04-01 | 10d |  |  |  |  | 200h | 200h |
| 222 | 1.4.4.14.13.1.1 | Для отложенного добавления персон |  | 5d | 2014-03-19 A | 2014-03-25 A |  | 100% |  | 2014-03-19 | 2014-03-25 | 5d |  |  |  | Глеб Ноздрачев | 40h | 40h |
| 223 | 1.4.4.14.13.1.2 | Адаптация под функционал настраиваемых реквизитов |  | 5d | 2014-04-02 A | 2014-04-08 A | 222FS+5d | 100% |  | 2014-03-26 | 2014-04-01 | 5d |  |  |  | Тугушев Илья; Глеб Ноздрачев; Java разработчик3; Тестировщик | 160h | 160h |
| 224 | 1.4.4.14.13.2 | таблица описания объектов |  | 5d | 2014-04-09 A | 2014-04-15 A | 223 | 100% |  |  |  |  |  |  |  | Глеб Ноздрачев | 40h | 40h |
| 225 | 1.4.4.14.13.3 | Конфиг ДОП |  | 3d | 2014-04-09 A | 2014-04-11 A | 207, 222, 221 | 100% |  | 2014-03-26 | 2014-03-28 | 3d |  |  |  | Глеб Ноздрачев | 24h | 24h |
| 226 | 1.4.4.14.13.4 | Mapper |  | 6d | 2014-04-14 | 2014-04-21 | 225 |  |  | 2014-03-31 | 2014-04-04 | 5d | 101d |  |  | Глеб Ноздрачев | 48h |  |
| 227 | 1.4.4.14.13.5 | Коллекции |  | 4d | 2014-04-01 | 2014-04-04 | 219 |  |  | 2014-04-01 | 2014-04-10 | 8d | 112d |  |  | (БТЛ) Олег Еренцов; (БТЛ) Дмитрий Лякин; (БТЛ)Сергей Степыгин | 96h |  |
| 228 | 1.4.4.14.13.6 | Проверки сборки и функционала |  | 5d | 2014-04-09 | 2014-04-15 | 225SS |  |  | 2014-04-18 | 2014-05-07 | 12d | 105d |  |  | Java разработчик3 | 40h |  |

Notes:
- 200: Пролведение процедуры Revers Engineering и составлене алгоритма функционирования
- 201: Пнренос логики на java
- 211: Системные настройки для ВнД (1дескр + 10типов) [NNN] 1 дн
- 212: Х тестовых РКК ВнД [YYY] 2ч

| ID | WBS | Task | Type | Duration | Start | Finish | Predecessors | Complete | Remaining | Baseline start | Baseline finish | Baseline duration | Total slack | Constraint | Resources | Work | Actual work |
| --- | --- | --- | --- | --- | --- | --- | --- | --- | --- | --- | --- | --- | --- | --- | --- | --- | --- |
| 229 | 1.4.4.14.14 | **Интеграция с CMJ по ОРД** |  | 35.2d? | 2014-03-21 A | 2014-05-14 A |  | 100% |  | 2014-03-21 | 2014-05-12 | 34d? |  |  |  | 462.4h | 462.4h |
| 230 | 1.4.4.14.14.1 | Конфиг ДОП |  | 3d | 2014-03-21 A | 2014-03-25 A | 207, 190SF | 100% |  | 2014-03-21 | 2014-03-25 | 3d |  |  | Александр Власюк | 24h | 24h |
| 231 | 1.4.4.14.14.2 | Mapper |  | 5d | 2014-03-26 A | 2014-04-01 A | 230 | 100% |  | 2014-03-26 | 2014-04-01 | 5d |  |  | Александр Власюк | 40h | 40h |
| 232 | 1.4.4.14.14.3 | **Настраиваемые коллекции** |  | 8d? | 2014-04-02 A | 2014-04-11 A | 231 | 100% |  | 2014-04-02 | 2014-04-11 | 8d? |  |  |  | 158.4h | 158.4h |
| 233 | 1.4.4.14.14.3.1 | **Конфигурация коллекций** |  | 7d | 2014-04-02 A | 2014-04-10 A |  | 100% |  | 2014-04-02 | 2014-04-10 | 7d |  |  |  | 152h | 152h |
| 234 | 1.4.4.14.14.3.1.1 | Типовая иерархия кастомных папок (3шт) |  | 6d | 2014-04-02 A | 2014-04-09 A |  | 100% |  | 2014-04-02 | 2014-04-09 | 6d |  |  | Евгений Сафроненко | 48h | 48h |
| 235 | 1.4.4.14.14.3.1.2 | Системные настройки для ОРД |  | 6d | 2014-04-02 A | 2014-04-09 A | 234SS | 100% |  | 2014-04-02 | 2014-04-09 | 6d |  |  | Тимофей Билый | 48h | 48h |
| 236 | 1.4.4.14.14.3.1.3 | Доработка расширенного поиска |  | 7d | 2014-04-02 A | 2014-04-10 A | 234SS | 100% |  | 2014-04-02 | 2014-04-10 | 7d |  |  | Сергей Околот | 56h | 56h |
| 237 | 1.4.4.14.14.3.2 | Проверка работы |  | 1d? | 2014-04-11 A | 2014-04-11 A | 233 | 100% |  | 2014-04-11 | 2014-04-11 | 1d? |  |  | Глеб Ноздрачев [80%] | 6.4h | 6.4h |
| 238 | 1.4.4.14.14.4 | **Перенос логики сервисов по ОРД** |  | 22.2d | 2014-04-09 A | 2014-05-14 A |  | 100% |  | 2014-04-28 | 2014-05-12 | 7d |  |  |  | 48h | 48h |
| 239 | 1.4.4.14.14.4.1 | Задание поставлено | milestone | 0d | 2014-05-14 A | 2014-05-14 A | 213 | 100% |  | 2014-04-28 | 2014-04-28 | 0d |  | start no earlier than 2013-09-30 | Тугушев Илья [80%] |  |  |
| 240 | 1.4.4.14.14.4.2 | Пролведение процедуры Revers Engineering для процессов |  | 3d | 2014-04-09 A | 2014-04-11 A | 170 | 100% |  | 2014-04-29 | 2014-05-12 | 7d |  |  | Наталья Смолянец (Смолянец) | 24h | 24h |
| 241 | 1.4.4.14.14.4.3 | Реализация в слое CMJ-CMSochi |  | 3d | 2014-04-09 A | 2014-04-11 A | 240SS | 100% |  | 2014-04-29 | 2014-05-12 | 7d |  |  | Антон Ганчев (Киев) | 24h | 24h |
| 242 | 1.4.4.14.14.5 | **Разработка коллекций** |  | 8d | 2014-03-26 A | 2014-04-04 A |  | 100% |  | 2014-04-11 | 2014-04-22 | 8d |  |  |  | 192h | 192h |
| 243 | 1.4.4.14.14.5.1 | Коллекции |  | 8d | 2014-03-26 A | 2014-04-04 A | 230 | 100% |  | 2014-04-11 | 2014-04-22 | 8d |  |  | (БТЛ) Олег Еренцов; (БТЛ) Дмитрий Лякин; (БТЛ)Сергей Степыгин | 192h | 192h |
| 244 | 1.4.4.14.14.6 | Интеграция по ОРД выполнена | milestone | 0d | 2014-04-11 A | 2014-04-11 A | 231, 232, 243 | 100% |  | 2014-04-22 | 2014-04-22 | 0d |  |  |  |  |  |
| 245 | 1.4.4.14.15 | Готовность в "ВорккФлоу" |  | 1d? | 2014-05-14 | 2014-05-15 | 229, 220, 186, 182 |  |  |  |  |  | 96.8d |  |  |  |  |
| 246 | 1.4.4.14.16 | **Интеграция с CMJ по самостоятельным поручениям** |  | 33d? | 2014-04-02 A | 2014-05-22 |  | 99% | 0d? | 2014-04-02 | 2014-05-21 | 33d? | 92d |  |  | 502.4h | 502.4h |
| 247 | 1.4.4.14.16.1 | Конфиг ДОП |  | 3d | 2014-04-02 A | 2014-04-04 A | 231 | 100% |  | 2014-04-02 | 2014-04-04 | 3d |  |  | Александр Власюк | 24h | 24h |
| 248 | 1.4.4.14.16.2 | Mapper |  | 5d | 2014-04-07 A | 2014-04-11 A | 247 | 100% |  | 2014-04-07 | 2014-04-11 | 5d |  |  | Александр Власюк | 40h | 40h |
| 249 | 1.4.4.14.16.3 | **Настраиваемые коллекции** |  | 8d? | 2014-04-14 A | 2014-04-23 A | 248 | 100% |  | 2014-04-14 | 2014-04-23 | 8d? |  |  |  | 158.4h | 158.4h |
| 250 | 1.4.4.14.16.3.1 | **Конфигурация коллекций** |  | 7d | 2014-04-14 A | 2014-04-22 A | 235 | 100% |  | 2014-04-14 | 2014-04-22 | 7d |  |  |  | 152h | 152h |
| 251 | 1.4.4.14.16.3.1.1 | Типовая иерархия кастомных папок (3шт) |  | 6d | 2014-04-14 A | 2014-04-21 A |  | 100% |  | 2014-04-14 | 2014-04-21 | 6d |  |  | Евгений Сафроненко | 48h | 48h |
| 252 | 1.4.4.14.16.3.1.2 | Системные настройки для СамПор |  | 6d | 2014-04-14 A | 2014-04-21 A | 251SS | 100% |  | 2014-04-14 | 2014-04-21 | 6d |  |  | Тимофей Билый | 48h | 48h |
| 253 | 1.4.4.14.16.3.1.3 | Доработка расширенного поиска |  | 7d | 2014-04-14 A | 2014-04-22 A | 251SS | 100% |  | 2014-04-14 | 2014-04-22 | 7d |  |  | Сергей Околот | 56h | 56h |
| 254 | 1.4.4.14.16.3.2 | Проверка работы |  | 1d? | 2014-04-23 A | 2014-04-23 A | 250 | 100% |  | 2014-04-23 | 2014-04-23 | 1d? |  |  | Глеб Ноздрачев [80%] | 6.4h | 6.4h |

Notes:
- 235: Системные настройки для ВнД (1дескр + 10типов) [NNN] 1 дн
- 237: Х тестовых РКК ВнД [YYY] 2ч
- 252: Системные настройки для ВнД (1дескр + 10типов) [NNN] 1 дн
- 254: Х тестовых РКК ВнД [YYY] 2ч

| ID | WBS | Task | Type | Duration | Start | Finish | Predecessors | Complete | Remaining | Baseline start | Baseline finish | Baseline duration | Total slack | Free slack | Constraint | Resources | Work | Actual work |
| --- | --- | --- | --- | --- | --- | --- | --- | --- | --- | --- | --- | --- | --- | --- | --- | --- | --- | --- |
| 255 | 1.4.4.14.16.4 | **Перенос логики сервисов по СамПор** |  | 7d | 2014-05-12 A | 2014-05-20 A |  | 100% |  | 2014-05-12 | 2014-05-21 | 7d |  |  |  |  | 112h | 112h |
| 256 | 1.4.4.14.16.4.1 | Задание поставлено | milestone | 0d | 2014-05-12 A | 2014-05-12 A | 241 | 100% |  | 2014-05-12 | 2014-05-12 | 0d |  |  | start no earlier than 2014-05-12 | Тугушев Илья [80%] |  |  |
| 257 | 1.4.4.14.16.4.2 | Пролведение процедуры Revers Engineering для процессов |  | 7d | 2014-05-12 A | 2014-05-20 A | 256 | 100% |  | 2014-05-13 | 2014-05-21 | 7d |  |  |  | Наталья Смолянец (Смолянец) | 56h | 56h |
| 258 | 1.4.4.14.16.4.3 | Реализация в слое CMJ-CMSochi |  | 7d | 2014-05-12 A | 2014-05-20 A | 257SS | 100% |  | 2014-05-13 | 2014-05-21 | 7d |  |  |  | Антон Ганчев (Киев) | 56h | 56h |
| 259 | 1.4.4.14.16.5 | **Разработка коллекций** |  | 7d | 2014-05-12 A | 2014-05-20 A |  | 100% |  | 2014-04-23 | 2014-05-06 | 8d |  |  |  |  | 168h | 168h |
| 260 | 1.4.4.14.16.5.1 | Коллекции |  | 7d | 2014-05-12 A | 2014-05-20 A | 256 | 100% |  | 2014-04-23 | 2014-05-06 | 8d |  |  |  | (БТЛ) Олег Еренцов; (БТЛ) Дмитрий Лякин; (БТЛ)Сергей Степыгин | 168h | 168h |
| 261 | 1.4.4.14.16.6 | Интеграция по СамПор выполнена | milestone | 0d | 2014-05-22 | 2014-05-22 | 248, 249 |  |  | 2014-05-06 | 2014-05-06 | 0d | 92d |  | start no earlier than 2014-05-22 |  |  |  |
| 262 | 1.4.4.14.17 | **Интеграция с CMJ по ОГ** |  | 41d? | 2014-04-02 A | 2014-06-02 |  | 98% | 0.8d? | 2014-04-02 | 2014-05-21 | 33d? | 84d |  |  |  | 550.4h | 526.4h |
| 263 | 1.4.4.14.17.1 | Конфиг ДОП |  | 3d | 2014-04-02 A | 2014-04-04 A | 230, 231 | 100% |  | 2014-04-02 | 2014-04-04 | 3d |  |  |  | Александр Власюк | 24h | 24h |
| 264 | 1.4.4.14.17.2 | Mapper |  | 5d | 2014-04-07 A | 2014-04-11 A | 263 | 100% |  | 2014-04-07 | 2014-04-11 | 5d |  |  |  | Александр Власюк | 40h | 40h |
| 265 | 1.4.4.14.17.3 | **Настраиваемые коллекции** |  | 8d? | 2014-04-14 A | 2014-04-23 A | 264 | 100% |  | 2014-04-14 | 2014-04-23 | 8d? |  |  |  |  | 158.4h | 158.4h |
| 266 | 1.4.4.14.17.3.1 | **Конфигурация коллекций** |  | 7d | 2014-04-14 A | 2014-04-22 A |  | 100% |  | 2014-04-14 | 2014-04-22 | 7d |  |  |  |  | 152h | 152h |
| 267 | 1.4.4.14.17.3.1.1 | Типовая иерархия кастомных папок (3шт) |  | 6d | 2014-04-14 A | 2014-04-21 A |  | 100% |  | 2014-04-14 | 2014-04-21 | 6d |  |  |  | Евгений Сафроненко | 48h | 48h |
| 268 | 1.4.4.14.17.3.1.2 | Системные настройки для ОГ |  | 6d | 2014-04-14 A | 2014-04-21 A | 267SS | 100% |  | 2014-04-14 | 2014-04-21 | 6d |  |  |  | Тимофей Билый | 48h | 48h |
| 269 | 1.4.4.14.17.3.1.3 | Доработка расширенного поиска |  | 7d | 2014-04-14 A | 2014-04-22 A | 267SS, 236 | 100% |  | 2014-04-14 | 2014-04-22 | 7d |  |  |  | Сергей Околот | 56h | 56h |
| 270 | 1.4.4.14.17.3.2 | Проверка работы |  | 1d? | 2014-04-23 A | 2014-04-23 A | 266 | 100% |  | 2014-04-23 | 2014-04-23 | 1d? |  |  |  | Глеб Ноздрачев [80%] | 6.4h | 6.4h |
| 271 | 1.4.4.14.17.4 | **Перенос логики сервисов по ОГ** |  | 7d | 2014-05-20 A | 2014-05-29 A |  | 100% |  | 2014-05-12 | 2014-05-21 | 7d |  |  |  |  | 112h | 112h |
| 272 | 1.4.4.14.17.4.1 | Задание поставлено | milestone | 0d | 2014-05-20 A | 2014-05-20 A | 263, 240, 258 | 100% |  | 2014-05-12 | 2014-05-12 | 0d |  |  | start no earlier than 2013-09-30 | Тугушев Илья [80%] |  |  |
| 273 | 1.4.4.14.17.4.2 | Пролведение процедуры Revers Engineering для процессов |  | 7d | 2014-05-21 A | 2014-05-29 A | 272 | 100% |  | 2014-05-13 | 2014-05-21 | 7d |  |  |  | Наталья Смолянец (Смолянец) | 56h | 56h |
| 274 | 1.4.4.14.17.4.3 | Реализация в слое CMJ-CMSochi |  | 7d | 2014-05-21 A | 2014-05-29 A | 273SS | 100% |  | 2014-05-13 | 2014-05-21 | 7d |  |  |  | Антон Ганчев (Киев) | 56h | 56h |
| 275 | 1.4.4.14.17.5 | **Разработка коллекций** |  | 9d | 2014-05-21 A | 2014-06-02 |  | 89% | 1d | 2014-04-23 | 2014-05-06 | 8d | 43d | 0d |  |  | 216h | 192h |
| 276 | 1.4.4.14.17.5.1 | Коллекции |  | 8d | 2014-05-21 A | 2014-05-30 A | 263, 260 | 100% |  | 2014-04-23 | 2014-05-06 | 8d |  |  |  | (БТЛ) Олег Еренцов; (БТЛ) Дмитрий Лякин; (БТЛ)Сергей Степыгин | 192h | 192h |
| 277 | 1.4.4.14.17.5.2 | Тематический классификаnор (2 коллекции) |  | 1d | 2014-06-02 | 2014-06-02 | 276 |  |  |  |  |  | 43d |  |  | (БТЛ) Олег Еренцов; (БТЛ) Дмитрий Лякин; (БТЛ)Сергей Степыгин | 24h |  |
| 278 | 1.4.4.14.17.6 | Интеграция по ОГ выполнена | milestone | 0d | 2014-05-30 | 2014-05-30 | 264, 265, 276 |  |  | 2014-05-06 | 2014-05-06 | 0d | 85d |  |  |  |  |  |

Notes:
- 268: Системные настройки для ВнД (1дескр + 10типов) [NNN] 1 дн
- 270: Х тестовых РКК ВнД [YYY] 2ч

| ID | WBS | Task | Type | Duration | Start | Finish | Predecessors | Complete | Remaining | Baseline start | Baseline finish | Baseline duration | Total slack | Free slack | Constraint | Resources | Work | Actual work |
| --- | --- | --- | --- | --- | --- | --- | --- | --- | --- | --- | --- | --- | --- | --- | --- | --- | --- | --- |
| 279 | 1.4.4.14.18 | **Интеграция с CMJ по WF + связи** |  | 38d? | 2014-04-14 A | 2014-06-09 |  | 10% | 34.29d? | 2014-04-14 | 2014-06-19 | 46d? | 79d |  |  |  | 398.4h | 32h |
| 280 | 1.4.4.14.18.1 | Конфиг ДОП |  | 1d | 2014-04-14 A | 2014-04-14 A | 264 | 100% |  | 2014-04-14 | 2014-04-14 | 1d |  |  |  | Александр Власюк | 8h | 8h |
| 281 | 1.4.4.14.18.2 | Mapper |  | 3d | 2014-04-15 A | 2014-04-17 A | 280 | 100% |  | 2014-04-15 | 2014-04-17 | 3d |  |  |  | Александр Власюк | 24h | 24h |
| 282 | 1.4.4.14.18.3 | **Настраиваемые коллекции** |  | 8d? | 2014-04-23 | 2014-05-06 | 281 |  |  | 2014-04-23 | 2014-05-06 | 8d? | 61d | 23d |  |  | 126.4h |  |
| 283 | 1.4.4.14.18.3.1 | **Конфигурация коллекций** |  | 7d | 2014-04-23 | 2014-05-05 | 266 |  |  | 2014-04-23 | 2014-05-05 | 7d | 61d | 0d |  |  | 120h |  |
| 284 | 1.4.4.14.18.3.1.1 | Типовая иерархия кастомных папок (3шт) |  | 4d | 2014-04-23 | 2014-04-28 |  |  |  | 2014-04-23 | 2014-04-28 | 4d | 53d | 0d |  | Евгений Сафроненко | 32h |  |
| 285 | 1.4.4.14.18.3.1.2 | Системные настройки для WF |  | 4d | 2014-04-23 | 2014-04-28 | 284SS |  |  | 2014-04-23 | 2014-04-28 | 4d | 61d | 0d |  | Тимофей Билый | 32h |  |
| 286 | 1.4.4.14.18.3.1.3 | Доработка расширенного поиска |  | 7d | 2014-04-23 | 2014-05-05 | 284SS |  |  | 2014-04-23 | 2014-05-05 | 7d | 102d |  |  | Сергей Околот | 56h |  |
| 287 | 1.4.4.14.18.3.2 | Проверка работы |  | 1d? | 2014-05-06 | 2014-05-06 | 283 |  |  | 2014-05-06 | 2014-05-06 | 1d? | 94d |  |  | Глеб Ноздрачев [80%] | 6.4h |  |
| 288 | 1.4.4.14.18.4 | **Перенос логики сервисов по WF** |  | 3d | 2014-05-29 | 2014-06-03 |  |  |  | 2014-05-21 | 2014-05-26 | 3d | 57d |  |  |  | 48h |  |
| 289 | 1.4.4.14.18.4.1 | Задание поставлено | milestone | 0d | 2014-05-29 | 2014-05-29 | 280, 274 |  |  | 2014-05-21 | 2014-05-21 | 0d | 49d | 0d | start no earlier than 2013-09-30 | Тугушев Илья [80%] |  |  |
| 290 | 1.4.4.14.18.4.2 | Пролведение процедуры Revers Engineering для процессов |  | 3d | 2014-05-30 | 2014-06-03 | 289 |  |  | 2014-05-22 | 2014-05-26 | 3d | 57d | 0d |  | Наталья Смолянец (Смолянец) | 24h |  |
| 291 | 1.4.4.14.18.4.3 | Реализация в слое CMJ-CMSochi |  | 3d | 2014-05-30 | 2014-06-03 | 290SS |  |  | 2014-05-22 | 2014-05-26 | 3d | 57d | 0d |  | Антон Ганчев (Киев) | 24h |  |
| 292 | 1.4.4.14.18.5 | **Разработка адаптеров для СрвСогл** |  | 10d | 2014-04-21 | 2014-05-07 |  |  |  | 2014-06-05 | 2014-06-19 | 10d | 101d |  |  |  | 72h |  |
| 293 | 1.4.4.14.18.5.1 | Задание поставлено | milestone | 0d | 2014-04-21 | 2014-04-21 | 280, 220 |  |  | 2014-06-05 | 2014-06-05 | 0d | 93d | 0d | start no earlier than 2013-09-30 | Тугушев Илья [80%] |  |  |
| 294 | 1.4.4.14.18.5.2 | Разработка архитектуры дя адаптеров |  | 5d | 2014-04-22 | 2014-04-28 | 293 |  |  | 2014-06-06 | 2014-06-12 | 5d | 96d | 0d |  | Тугушев Илья [80%] | 32h |  |
| 295 | 1.4.4.14.18.5.3 | Разработка адаптеров |  | 5d | 2014-04-29 | 2014-05-07 | 294 |  |  | 2014-06-13 | 2014-06-19 | 5d | 96d |  |  | Александр Власюк | 40h |  |
| 296 | 1.4.4.14.18.6 | **Разработка коллекций** |  | 5d | 2014-06-03 | 2014-06-09 |  |  |  | 2014-05-07 | 2014-05-14 | 5d | 43d |  |  |  | 120h |  |
| 297 | 1.4.4.14.18.6.1 | Коллекции |  | 5d | 2014-06-03 | 2014-06-09 | 280, 275 |  |  | 2014-05-07 | 2014-05-14 | 5d | 43d | 0d |  | (БТЛ) Олег Еренцов; (БТЛ) Дмитрий Лякин; (БТЛ)Сергей Степыгин | 120h |  |
| 298 | 1.4.4.14.18.7 | Интеграция по WF выполнена | milestone | 0d | 2014-06-09 | 2014-06-09 | 281, 282, 297 |  |  | 2014-05-14 | 2014-05-14 | 0d | 79d |  |  |  |  |  |
| 299 | 1.4.4.14.19 | **Интеграция с CMJ по сервису Контроля Заданий** |  | 177d? | 2013-09-30 | 2014-06-18 |  |  |  | 2014-04-18 | 2014-06-04 | 31d? | 72d |  |  |  | 438.4h |  |
| 300 | 1.4.4.14.19.1 | **Настраиваемые коллекции** |  | 10d? | 2014-05-30 | 2014-06-12 |  |  |  | 2014-05-22 | 2014-06-04 | 10d? | 60d | 4d |  |  | 158.4h |  |
| 301 | 1.4.4.14.19.1.1 | **Конфигурация коллекций** |  | 9d | 2014-05-30 | 2014-06-11 |  |  |  | 2014-05-22 | 2014-06-03 | 9d | 60d | 0d |  |  | 152h |  |
| 302 | 1.4.4.14.19.1.1.1 | Типовая иерархия кастомных папок |  | 6d | 2014-06-04 | 2014-06-11 | 291 |  |  | 2014-05-27 | 2014-06-03 | 6d | 57d | 0d |  | Евгений Сафроненко | 48h |  |
| 303 | 1.4.4.14.19.1.1.2 | Доработка расширенного поиска |  | 7d | 2014-05-30 | 2014-06-09 | 291SS |  |  | 2014-05-22 | 2014-05-30 | 7d | 78d |  |  | Сергей Околот | 56h |  |
| 304 | 1.4.4.14.19.1.1.3 | Системные настройки для КЗ |  | 6d | 2014-06-04 | 2014-06-11 | 302SS |  |  | 2014-05-27 | 2014-06-03 | 6d | 57d | 0d |  | Тимофей Билый | 48h |  |
| 305 | 1.4.4.14.19.1.2 | Проверка работы |  | 1d? | 2014-06-12 | 2014-06-12 | 301 |  |  | 2014-06-04 | 2014-06-04 | 1d? | 76d |  |  | Глеб Ноздрачев [80%] | 6.4h |  |

Notes:
- 285: Системные настройки для ВнД (1дескр + 10типов) [NNN] 1 дн
- 287: Х тестовых РКК ВнД [YYY] 2ч
- 304: Системные настройки для ВнД (1дескр + 10типов) [NNN] 1 дн
- 305: Х тестовых РКК ВнД [YYY] 2ч

| ID | WBS | Task | Type | Duration | Start | Finish | Predecessors | Baseline start | Baseline finish | Baseline duration | Total slack | Free slack | Constraint | Resources | Work |
| --- | --- | --- | --- | --- | --- | --- | --- | --- | --- | --- | --- | --- | --- | --- | --- |
| 306 | 1.4.4.14.19.2 | **Перенос логики сервисов по КЗ** |  | 150d | 2013-09-30 | 2014-05-12 |  | 2014-04-22 | 2014-05-12 | 11d | 99d |  |  |  | 112h |
| 307 | 1.4.4.14.19.2.1 | Задание поставлено | milestone | 0d | 2013-09-30 | 2013-09-30 |  | 2014-04-22 | 2014-04-22 | 0d | 204d | 143d | start no earlier than 2013-09-30 | Тугушев Илья [80%] |  |
| 308 | 1.4.4.14.19.2.2 | Пролведение процедуры Revers Engineering для процессов |  | 7d | 2014-04-29 | 2014-05-12 | 307, 285 | 2014-04-29 | 2014-05-12 | 7d | 53d | 0d |  | Наталья Смолянец (Смолянец) | 56h |
| 309 | 1.4.4.14.19.2.3 | Реализация в слое CMJ-CMSochi |  | 7d | 2014-04-29 | 2014-05-12 | 308SS | 2014-04-29 | 2014-05-12 | 7d | 99d |  |  | Антон Ганчев (Киев) | 56h |
| 310 | 1.4.4.14.19.3 | **Разработка коллекций** |  | 7d | 2014-06-10 | 2014-06-18 |  | 2014-05-15 | 2014-05-23 | 7d | 43d |  |  |  | 168h |
| 311 | 1.4.4.14.19.3.1 | Коллекции |  | 7d | 2014-06-10 | 2014-06-18 | 297 | 2014-05-15 | 2014-05-23 | 7d | 43d | 0d |  | (БТЛ) Олег Еренцов; (БТЛ) Дмитрий Лякин; (БТЛ)Сергей Степыгин | 168h |
| 312 | 1.4.4.14.19.4 | Интеграция по КЗ выполнена | milestone | 0d | 2014-06-18 | 2014-06-18 | 300, 311 | 2014-06-04 | 2014-06-04 | 0d | 72d |  |  |  |  |
| 313 | 1.4.4.14.20 | **Интеграция с CMJ по Формированию дел** |  | 293d? | 2013-04-22 | 2014-06-26 |  | 2014-04-30 | 2014-06-13 | 30d? | 66d |  |  |  | 478.4h |
| 314 | 1.4.4.14.20.1 | Конфиг ДОП |  | 3d | 2013-04-22 | 2013-04-24 |  | 2014-04-30 | 2014-05-06 | 3d | 304d | 0d |  | Александр Власюк | 24h |
| 315 | 1.4.4.14.20.2 | Mapper |  | 5d | 2013-04-25 | 2013-05-06 | 314 | 2014-05-07 | 2014-05-14 | 5d | 304d | 0d |  | Александр Власюк | 40h |
| 316 | 1.4.4.14.20.3 | **Настраиваемые коллекции** |  | 8d? | 2014-06-12 | 2014-06-23 | 315 | 2014-06-04 | 2014-06-13 | 8d? | 57d | 3d |  |  | 158.4h |
| 317 | 1.4.4.14.20.3.1 | **Конфигурация коллекций** |  | 7d | 2014-06-12 | 2014-06-20 |  | 2014-06-04 | 2014-06-12 | 7d | 57d | 0d |  |  | 152h |
| 318 | 1.4.4.14.20.3.1.1 | Типовая иерархия кастомных папок |  | 6d | 2014-06-12 | 2014-06-19 | 304 | 2014-06-04 | 2014-06-11 | 6d | 57d | 0d |  | Евгений Сафроненко | 48h |
| 319 | 1.4.4.14.20.3.1.2 | Доработка расширенного поиска |  | 7d | 2014-06-12 | 2014-06-20 | 318SS | 2014-06-04 | 2014-06-12 | 7d | 69d |  |  | Сергей Околот | 56h |
| 320 | 1.4.4.14.20.3.1.3 | Системные настройки для ФД |  | 6d | 2014-06-12 | 2014-06-19 | 318SS | 2014-06-04 | 2014-06-11 | 6d | 57d | 0d |  | Тимофей Билый | 48h |
| 321 | 1.4.4.14.20.3.2 | Проверка работы |  | 1d? | 2014-06-23 | 2014-06-23 | 317 | 2014-06-13 | 2014-06-13 | 1d? | 69d |  |  | Глеб Ноздрачев [80%] | 6.4h |
| 322 | 1.4.4.14.20.4 | **Перенос логики сервисов по ФД** |  | 157d | 2013-09-30 | 2014-05-21 |  | 2014-05-06 | 2014-05-21 | 10d | 61d |  |  |  | 112h |
| 323 | 1.4.4.14.20.4.1 | Задание поставлено | milestone | 0d | 2013-09-30 | 2013-09-30 | 314 | 2014-05-06 | 2014-05-06 | 0d | 211d | 150d | start no earlier than 2013-09-30 | Тугушев Илья [80%] |  |
| 324 | 1.4.4.14.20.4.2 | Пролведение процедуры Revers Engineering для процессов |  | 7d | 2014-05-13 | 2014-05-21 | 323, 308 | 2014-05-13 | 2014-05-21 | 7d | 61d | 0d |  | Наталья Смолянец (Смолянец) | 56h |
| 325 | 1.4.4.14.20.4.3 | Реализация в слое CMJ-CMSochi |  | 7d | 2014-05-13 | 2014-05-21 | 324SS | 2014-05-13 | 2014-05-21 | 7d | 61d | 0d |  | Антон Ганчев (Киев) | 56h |
| 326 | 1.4.4.14.20.5 | **Разработка коллекций** |  | 6d | 2014-06-19 | 2014-06-26 |  | 2014-05-26 | 2014-06-02 | 6d | 43d |  |  |  | 144h |
| 327 | 1.4.4.14.20.5.1 | Коллекции |  | 6d | 2014-06-19 | 2014-06-26 | 314, 311 | 2014-05-26 | 2014-06-02 | 6d | 43d | 0d |  | (БТЛ) Олег Еренцов; (БТЛ) Дмитрий Лякин; (БТЛ)Сергей Степыгин | 144h |
| 328 | 1.4.4.14.20.6 | Интеграция по ФД выполнена | milestone | 0d | 2014-06-26 | 2014-06-26 | 315, 316, 327 | 2014-06-13 | 2014-06-13 | 0d | 66d |  |  |  |  |
| 329 | 1.4.4.14.21 | **Интеграция с CMJ по Заседаниям** |  | 291d? | 2013-05-07 | 2014-07-04 |  | 2014-05-15 | 2014-06-23 | 28d? | 60d |  |  |  | 478.4h |
| 330 | 1.4.4.14.21.1 | Конфиг ДОП |  | 3d | 2013-05-07 | 2013-05-13 | 315 | 2014-05-15 | 2014-05-19 | 3d | 304d | 0d |  | Александр Власюк | 24h |
| 331 | 1.4.4.14.21.2 | Mapper |  | 5d | 2013-05-14 | 2013-05-20 | 330 | 2014-05-20 | 2014-05-26 | 5d | 304d | 0d |  | Александр Власюк | 40h |

Notes:
- 320: Системные настройки для ВнД (1дескр + 10типов) [NNN] 1 дн
- 321: Х тестовых РКК ВнД [YYY] 2ч

| ID | WBS | Task | Type | Duration | Start | Finish | Predecessors | Baseline start | Baseline finish | Baseline duration | Total slack | Free slack | Constraint | Resources | Work |
| --- | --- | --- | --- | --- | --- | --- | --- | --- | --- | --- | --- | --- | --- | --- | --- |
| 332 | 1.4.4.14.21.3 | **Настраиваемые коллекции** |  | 8d? | 2014-06-20 | 2014-07-01 | 331 | 2014-06-12 | 2014-06-23 | 8d? | 57d | 3d |  |  | 158.4h |
| 333 | 1.4.4.14.21.3.1 | **Конфигурация коллекций** |  | 7d | 2014-06-20 | 2014-06-30 |  | 2014-06-12 | 2014-06-20 | 7d | 57d | 0d |  |  | 152h |
| 334 | 1.4.4.14.21.3.1.1 | Типовая иерархия кастомных папок |  | 6d | 2014-06-20 | 2014-06-27 | 320 | 2014-06-12 | 2014-06-19 | 6d | 57d | 0d |  | Евгений Сафроненко | 48h |
| 335 | 1.4.4.14.21.3.1.2 | Системные настройки для Зсд |  | 6d | 2014-06-20 | 2014-06-27 | 334SS | 2014-06-12 | 2014-06-19 | 6d | 57d | 0d |  | Тимофей Билый | 48h |
| 336 | 1.4.4.14.21.3.1.3 | Доработка расширенного поиска |  | 7d | 2014-06-20 | 2014-06-30 | 334SS | 2014-06-12 | 2014-06-20 | 7d | 63d |  |  | Сергей Околот | 56h |
| 337 | 1.4.4.14.21.3.2 | Проверка работы |  | 1d? | 2014-07-01 | 2014-07-01 | 333 | 2014-06-23 | 2014-06-23 | 1d? | 63d |  |  | Глеб Ноздрачев [80%] | 6.4h |
| 338 | 1.4.4.14.21.4 | **Перенос логики сервисов по Зсд** |  | 7d | 2014-05-21 | 2014-05-30 |  | 2014-05-21 | 2014-05-30 | 7d | 61d |  |  |  | 112h |
| 339 | 1.4.4.14.21.4.1 | Задание поставлено | milestone | 0d | 2014-05-21 | 2014-05-21 | 330, 324 | 2014-05-21 | 2014-05-21 | 0d | 61d | 0d | start no earlier than 2013-09-30 | Тугушев Илья [80%] |  |
| 340 | 1.4.4.14.21.4.2 | Пролведение процедуры Revers Engineering для процессов |  | 7d | 2014-05-22 | 2014-05-30 | 339, 325 | 2014-05-22 | 2014-05-30 | 7d | 61d | 0d |  | Наталья Смолянец (Смолянец) | 56h |
| 341 | 1.4.4.14.21.4.3 | Реализация в слое CMJ-CMSochi |  | 7d | 2014-05-22 | 2014-05-30 | 340SS | 2014-05-22 | 2014-05-30 | 7d | 85d |  |  | Антон Ганчев (Киев) | 56h |
| 342 | 1.4.4.14.21.5 | **Разработка коллекций** |  | 6d | 2014-06-27 | 2014-07-04 |  | 2014-06-03 | 2014-06-10 | 6d | 43d |  |  |  | 144h |
| 343 | 1.4.4.14.21.5.1 | Коллекции |  | 6d | 2014-06-27 | 2014-07-04 | 330, 327 | 2014-06-03 | 2014-06-10 | 6d | 43d | 0d |  | (БТЛ) Олег Еренцов; (БТЛ) Дмитрий Лякин; (БТЛ)Сергей Степыгин | 144h |
| 344 | 1.4.4.14.21.6 | Интеграция по Зсд выполнена | milestone | 0d | 2014-07-04 | 2014-07-04 | 331, 332, 343 | 2014-06-23 | 2014-06-23 | 0d | 60d |  |  |  |  |
| 345 | 1.4.4.14.22 | **Интеграция с CMJ по Обсуждениям и ознакомлениям** |  | 290d? | 2013-05-21 | 2014-07-15 |  | 2014-05-27 | 2014-07-01 | 26d? | 53d |  |  |  | 502.4h |
| 346 | 1.4.4.14.22.1 | Конфиг ДОП |  | 3d | 2013-05-21 | 2013-05-23 | 331 | 2014-05-27 | 2014-05-29 | 3d | 304d | 0d |  | Александр Власюк | 24h |
| 347 | 1.4.4.14.22.2 | Mapper |  | 5d | 2013-05-24 | 2013-05-30 | 346 | 2014-05-30 | 2014-06-05 | 5d | 304d | 0d |  | Александр Власюк | 40h |
| 348 | 1.4.4.14.22.3 | **Настраиваемые коллекции** |  | 8d? | 2014-06-30 | 2014-07-09 | 347 | 2014-06-20 | 2014-07-01 | 8d? | 57d | 4d |  |  | 158.4h |
| 349 | 1.4.4.14.22.3.1 | **Конфигурация коллекций** |  | 7d | 2014-06-30 | 2014-07-08 |  | 2014-06-20 | 2014-06-30 | 7d | 57d | 0d |  |  | 152h |
| 350 | 1.4.4.14.22.3.1.1 | Типовая иерархия кастомных папок |  | 6d | 2014-06-30 | 2014-07-07 | 335 | 2014-06-20 | 2014-06-27 | 6d | 57d | 0d |  | Евгений Сафроненко | 48h |
| 351 | 1.4.4.14.22.3.1.2 | Доработка расширенного поиска |  | 7d | 2014-06-30 | 2014-07-08 | 350SS | 2014-06-20 | 2014-06-30 | 7d | 57d |  |  | Сергей Околот | 56h |
| 352 | 1.4.4.14.22.3.1.3 | Системные настройки для ОО |  | 6d | 2014-06-30 | 2014-07-07 | 350SS | 2014-06-20 | 2014-06-27 | 6d | 58d |  |  | Тимофей Билый | 48h |
| 353 | 1.4.4.14.22.3.2 | Проверка работы |  | 1d? | 2014-07-09 | 2014-07-09 | 349 | 2014-07-01 | 2014-07-01 | 1d? | 57d |  |  | Глеб Ноздрачев [80%] | 6.4h |
| 354 | 1.4.4.14.22.4 | **Перенос логики сервисов по ОО** |  | 171d | 2013-09-30 | 2014-06-10 |  | 2014-05-29 | 2014-06-10 | 8d | 61d |  |  |  | 112h |
| 355 | 1.4.4.14.22.4.1 | Задание поставлено | milestone | 0d | 2013-09-30 | 2013-09-30 | 346 | 2014-05-29 | 2014-05-29 | 0d | 225d | 164d | start no earlier than 2013-09-30 | Тугушев Илья [80%] |  |
| 356 | 1.4.4.14.22.4.2 | Пролведение процедуры Revers Engineering для процессов |  | 7d | 2014-06-02 | 2014-06-10 | 355, 340 | 2014-06-02 | 2014-06-10 | 7d | 53d | 0d |  | Наталья Смолянец (Смолянец) | 56h |
| 357 | 1.4.4.14.22.4.3 | Реализация в слое CMJ-CMSochi |  | 7d | 2014-06-02 | 2014-06-10 | 356SS | 2014-06-02 | 2014-06-10 | 7d | 61d | 0d |  | Антон Ганчев (Киев) | 56h |

Notes:
- 335: Системные настройки для ВнД (1дескр + 10типов) [NNN] 1 дн
- 337: Х тестовых РКК ВнД [YYY] 2ч
- 352: Системные настройки для ВнД (1дескр + 10типов) [NNN] 1 дн
- 353: Х тестовых РКК ВнД [YYY] 2ч

| ID | WBS | Task | Type | Duration | Start | Finish | Predecessors | Baseline start | Baseline finish | Baseline duration | Total slack | Free slack | Constraint | Resources | Work |
| --- | --- | --- | --- | --- | --- | --- | --- | --- | --- | --- | --- | --- | --- | --- | --- |
| 358 | 1.4.4.14.22.5 | **Разработка коллекций** |  | 7d | 2014-07-07 | 2014-07-15 |  | 2014-06-11 | 2014-06-19 | 7d | 43d |  |  |  | 168h |
| 359 | 1.4.4.14.22.5.1 | Коллекции |  | 7d | 2014-07-07 | 2014-07-15 | 346, 343 | 2014-06-11 | 2014-06-19 | 7d | 43d | 0d |  | (БТЛ) Олег Еренцов; (БТЛ) Дмитрий Лякин; (БТЛ)Сергей Степыгин | 168h |
| 360 | 1.4.4.14.22.6 | Интеграция по ОО выполнена | milestone | 0d | 2014-07-15 | 2014-07-15 | 347, 348, 359 | 2014-07-01 | 2014-07-01 | 0d | 53d |  |  |  |  |
| 361 | 1.4.4.14.23 | **Интеграция с CMJ по "Кейсам" + Документы** |  | 292d? | 2013-05-31 | 2014-07-29 |  | 2014-06-06 | 2014-07-03 | 20d? | 43d |  |  |  | 574.4h |
| 362 | 1.4.4.14.23.1 | Конфиг ДОП |  | 3d | 2013-05-31 | 2013-06-04 | 347 | 2014-06-06 | 2014-06-10 | 3d | 304d | 0d |  | Александр Власюк | 24h |
| 363 | 1.4.4.14.23.2 | Mapper |  | 5d | 2013-06-05 | 2013-06-11 | 362 | 2014-06-11 | 2014-06-17 | 5d | 304d | 0d |  | Александр Власюк | 40h |
| 364 | 1.4.4.14.23.3 | **Настраиваемые коллекции** |  | 8d? | 2013-06-12 | 2013-06-21 | 363 | 2014-06-18 | 2014-06-27 | 8d? | 304d | 276d |  |  | 158.4h |
| 365 | 1.4.4.14.23.3.1 | **Конфигурация коллекций** |  | 7d | 2013-06-12 | 2013-06-20 |  | 2014-06-18 | 2014-06-26 | 7d | 304d | 0d |  |  | 152h |
| 366 | 1.4.4.14.23.3.1.1 | Типовая иерархия кастомных папок |  | 6d | 2013-06-12 | 2013-06-19 |  | 2014-06-18 | 2014-06-25 | 6d | 304d | 0d |  | Евгений Сафроненко | 48h |
| 367 | 1.4.4.14.23.3.1.2 | Доработка расширенного поиска |  | 7d | 2013-06-12 | 2013-06-20 | 366SS | 2014-06-18 | 2014-06-26 | 7d | 304d |  |  | Сергей Околот | 56h |
| 368 | 1.4.4.14.23.3.1.3 | Системные настройки для "Кейсов" |  | 6d | 2013-06-12 | 2013-06-19 | 366SS | 2014-06-18 | 2014-06-25 | 6d | 305d |  |  | Тимофей Билый | 48h |
| 369 | 1.4.4.14.23.3.2 | Проверка работы |  | 1d? | 2013-06-21 | 2013-06-21 | 365 | 2014-06-27 | 2014-06-27 | 1d? | 319d |  |  | Глеб Ноздрачев [80%] | 6.4h |
| 370 | 1.4.4.14.23.4 | **Перенос логики сервисов по "Кейсам"** |  | 7d | 2014-06-10 | 2014-06-19 |  | 2014-06-10 | 2014-06-19 | 7d | 61d | 0d |  |  | 112h |
| 371 | 1.4.4.14.23.4.1 | Задание поставлено | milestone | 0d | 2014-06-10 | 2014-06-10 | 362, 357 | 2014-06-10 | 2014-06-10 | 0d | 61d | 0d | start no earlier than 2013-09-30 | Тугушев Илья [80%] |  |
| 372 | 1.4.4.14.23.4.2 | Пролведение процедуры Revers Engineering для процессов |  | 7d | 2014-06-11 | 2014-06-19 | 371 | 2014-06-11 | 2014-06-19 | 7d | 61d | 0d |  | Наталья Смолянец (Смолянец) | 56h |
| 373 | 1.4.4.14.23.4.3 | Реализация в слое CMJ-CMSochi |  | 7d | 2014-06-11 | 2014-06-19 | 372SS | 2014-06-11 | 2014-06-19 | 7d | 61d |  |  | Антон Ганчев (Киев) | 56h |
| 374 | 1.4.4.14.23.5 | **Разработка коллекций** |  | 10d | 2014-07-16 | 2014-07-29 |  | 2014-06-20 | 2014-07-03 | 10d | 43d |  |  |  | 240h |
| 375 | 1.4.4.14.23.5.1 | Коллекции |  | 10d | 2014-07-16 | 2014-07-29 | 362, 359 | 2014-06-20 | 2014-07-03 | 10d | 43d | 0d |  | (БТЛ) Олег Еренцов; (БТЛ) Дмитрий Лякин; (БТЛ)Сергей Степыгин | 240h |
| 376 | 1.4.4.14.23.6 | Интеграция по "Кейсам" выполнена | milestone | 0d | 2014-07-29 | 2014-07-29 | 363, 364, 375 | 2014-07-03 | 2014-07-03 | 0d | 43d |  |  |  |  |
| 377 | 1.4.4.14.24 | **Интеграция с CMJ ПКД** |  | 10d | 2014-06-19 | 2014-07-03 |  | 2014-06-19 | 2014-07-03 | 10d | 61d |  |  |  | 160h |
| 378 | 1.4.4.14.24.1 | **Перенос логики сервисов по ОО** |  | 10d | 2014-06-19 | 2014-07-03 |  | 2014-06-19 | 2014-07-03 | 10d | 61d |  |  |  | 160h |
| 379 | 1.4.4.14.24.1.1 | Задание поставлено | milestone | 0d | 2014-06-19 | 2014-06-19 | 357, 370 | 2014-06-19 | 2014-06-19 | 0d | 61d | 0d | start no earlier than 2013-09-30 | Тугушев Илья [80%] |  |
| 380 | 1.4.4.14.24.1.2 | Пролведение процедуры Revers Engineering для процессов |  | 10d | 2014-06-20 | 2014-07-03 | 379 | 2014-06-20 | 2014-07-03 | 10d | 61d | 0d |  | Наталья Смолянец (Смолянец) | 80h |
| 381 | 1.4.4.14.24.1.3 | Реализация в слое CMJ-CMSochi |  | 10d | 2014-06-20 | 2014-07-03 | 380SS | 2014-06-20 | 2014-07-03 | 10d | 61d |  |  | Антон Ганчев (Киев) | 80h |

Notes:
- 368: Системные настройки для ВнД (1дескр + 10типов) [NNN] 1 дн
- 369: Х тестовых РКК ВнД [YYY] 2ч

| ID | WBS | Task | Type | Duration | Start | Finish | Predecessors | Complete | Baseline start | Baseline finish | Baseline duration | Total slack | Free slack | Constraint | Resources | Work | Actual work |
| --- | --- | --- | --- | --- | --- | --- | --- | --- | --- | --- | --- | --- | --- | --- | --- | --- | --- |
| 382 | 1.4.4.14.25 | **Интеграция с CMJ по ПРВЗ(мобильность)** |  | 78d? | 2013-06-21 | 2013-10-08 |  |  | 2014-06-27 | 2014-07-18 | 16d? | 242d |  |  |  | 574.4h |  |
| 383 | 1.4.4.14.25.1 | Конфиг ДОП |  | 3d | 2013-06-21 | 2013-06-25 | 365 |  | 2014-06-27 | 2014-07-01 | 3d | 304d | 0d |  | Александр Власюк | 24h |  |
| 384 | 1.4.4.14.25.2 | Mapper |  | 5d | 2013-06-26 | 2013-07-02 | 383 |  | 2014-07-02 | 2014-07-08 | 5d | 304d | 0d |  | Александр Власюк | 40h |  |
| 385 | 1.4.4.14.25.3 | **Настраиваемые коллекции** |  | 8d? | 2013-07-03 | 2013-07-12 | 384 |  | 2014-07-09 | 2014-07-18 | 8d? | 304d | 0d |  |  | 158.4h |  |
| 386 | 1.4.4.14.25.3.1 | **Конфигурация коллекций** |  | 7d | 2013-07-03 | 2013-07-11 |  |  | 2014-07-09 | 2014-07-17 | 7d | 304d | 0d |  |  | 152h |  |
| 387 | 1.4.4.14.25.3.1.1 | Типовая иерархия кастомных папок |  | 6d | 2013-07-03 | 2013-07-10 |  |  | 2014-07-09 | 2014-07-16 | 6d | 304d | 0d |  | Евгений Сафроненко | 48h |  |
| 388 | 1.4.4.14.25.3.1.2 | Доработка расширенного поиска |  | 7d | 2013-07-03 | 2013-07-11 | 387SS |  | 2014-07-09 | 2014-07-17 | 7d | 304d |  |  | Сергей Околот | 56h |  |
| 389 | 1.4.4.14.25.3.1.3 | Системные настройки для ПРВЗ |  | 6d | 2013-07-03 | 2013-07-10 | 387SS |  | 2014-07-09 | 2014-07-16 | 6d | 305d |  |  | Тимофей Билый | 48h |  |
| 390 | 1.4.4.14.25.3.2 | Проверка работы |  | 1d? | 2013-07-12 | 2013-07-12 | 386 |  | 2014-07-18 | 2014-07-18 | 1d? | 304d |  |  | Глеб Ноздрачев [80%] | 6.4h |  |
| 391 | 1.4.4.14.25.4 | **Перенос логики сервисов по ПРВЗ** |  | 7d | 2013-09-30 | 2013-10-08 |  |  | 2014-07-01 | 2014-07-10 | 7d | 242d |  |  |  | 112h |  |
| 392 | 1.4.4.14.25.4.1 | Задание поставлено | milestone | 0d | 2013-09-30 | 2013-09-30 | 383 |  | 2014-07-01 | 2014-07-01 | 0d | 242d | 0d | start no earlier than 2013-09-30 | Тугушев Илья [80%] |  |  |
| 393 | 1.4.4.14.25.4.2 | Пролведение процедуры Revers Engineering для процессов |  | 7d | 2013-09-30 | 2013-10-08 | 392 |  | 2014-07-02 | 2014-07-10 | 7d | 242d | 0d |  | Наталья Смолянец (Смолянец) | 56h |  |
| 394 | 1.4.4.14.25.4.3 | Реализация в слое CMJ-CMSochi |  | 7d | 2013-09-30 | 2013-10-08 | 393SS |  | 2014-07-02 | 2014-07-10 | 7d | 242d |  |  | Антон Ганчев (Киев) | 56h |  |
| 395 | 1.4.4.14.25.5 | **Разработка коллекций** |  | 10d | 2013-06-26 | 2013-07-09 |  |  | 2014-07-02 | 2014-07-15 | 10d | 307d |  |  |  | 240h |  |
| 396 | 1.4.4.14.25.5.1 | Коллекции |  | 10d | 2013-06-26 | 2013-07-09 | 383 |  | 2014-07-02 | 2014-07-15 | 10d | 307d | 3d |  | (БТЛ) Олег Еренцов; (БТЛ) Дмитрий Лякин; (БТЛ)Сергей Степыгин | 240h |  |
| 397 | 1.4.4.14.25.6 | Интеграция по ПРВЗ выполнена | milestone | 0d | 2013-07-12 | 2013-07-12 | 384, 385, 396 |  | 2014-07-18 | 2014-07-18 | 0d | 304d |  |  |  |  |  |
| 398 | 1.4.4.14.26 | Основные коннеторы реализованы | milestone | 0d | 2013-12-09 A | 2013-12-09 A |  | 100% | 2013-12-09 | 2013-12-09 | 0d |  |  | start no earlier than 2013-12-09 |  |  |  |
| 399 | 1.4.4.15 | **Проверка работоспособности решения - Организация демонстрации** |  | 4d | 2013-12-09 A | 2013-12-12 A | 398 | 100% | 2013-12-09 | 2013-12-12 | 4d |  |  |  |  | 112h | 112h |
| 400 | 1.4.4.15.1 | Подготовка стенда |  | 3d | 2013-12-09 A | 2013-12-11 A | 401SF | 100% | 2013-12-09 | 2013-12-11 | 3d |  |  |  | Java разработчик3; Аналитик | 48h | 48h |
| 401 | 1.4.4.15.2 | Подготовка прототипа |  | 2d | 2013-12-09 A | 2013-12-10 A |  | 100% | 2013-12-09 | 2013-12-10 | 2d |  |  |  | Java разработчик3; Аналитик | 32h | 32h |
| 402 | 1.4.4.15.3 | Проведение демонстраций |  | 1d | 2013-12-11 A | 2013-12-11 A | 401 | 100% | 2013-12-11 | 2013-12-11 | 1d |  |  |  | Java разработчик3; Аналитик | 16h | 16h |
| 403 | 1.4.4.15.4 | Анализ результатов - выводы |  | 1d | 2013-12-12 A | 2013-12-12 A | 402 | 100% | 2013-12-12 | 2013-12-12 | 1d |  |  |  | Java разработчик3; Аналитик | 16h | 16h |
| 404 | 1.4.4.16 | **Сервис работы с вложениями** |  | 22d | 2013-07-11 A | 2013-08-09 A |  | 100% | 2013-07-11 | 2013-08-09 | 22d |  |  |  |  | 176h | 176h |
| 405 | 1.4.4.16.1 | Принято решение о проектировании сервиса обработки вложений | milestone | 0d | 2013-07-11 A | 2013-07-11 A |  | 100% | 2013-07-11 | 2013-07-11 | 0d |  |  | start no earlier than 2013-07-11 |  |  |  |
| 406 | 1.4.4.16.2 | API |  | 5d | 2013-07-11 A | 2013-07-17 A | 405 | 100% | 2013-07-11 | 2013-07-17 | 5d |  |  |  | Андрей Цветков | 40h | 40h |
| 407 | 1.4.4.16.3 | Реализация |  | 7d | 2013-07-18 A | 2013-07-26 A | 406 | 100% | 2013-07-18 | 2013-07-26 | 7d |  |  |  | Влад Симоненко | 56h | 56h |
| 408 | 1.4.4.16.4 | Исследования по перехватчику конца транзакции |  | 5d | 2013-07-29 A | 2013-08-02 A | 407 | 100% | 2013-07-29 | 2013-08-02 | 5d |  |  |  | Влад Симоненко | 40h | 40h |
| 409 | 1.4.4.16.5 | Чистка файлов в случае отката транзакции |  | 5d | 2013-08-05 A | 2013-08-09 A | 408 | 100% | 2013-08-05 | 2013-08-09 | 5d |  |  |  | Влад Симоненко | 40h | 40h |

Notes:
- 389: Системные настройки для ВнД (1дескр + 10типов) [NNN] 1 дн
- 390: Х тестовых РКК ВнД [YYY] 2ч

| ID | WBS | Task | Type | Duration | Start | Finish | Predecessors | Complete | Remaining | Baseline start | Baseline finish | Baseline duration | Total slack | Constraint | Resources | Work | Actual work |
| --- | --- | --- | --- | --- | --- | --- | --- | --- | --- | --- | --- | --- | --- | --- | --- | --- | --- |
| 410 | 1.4.4.17 | **Механизм формирования отчетов** |  | 30d | 2013-11-01 A | 2013-12-12 A |  | 100% |  | 2013-11-01 | 2013-12-12 | 30d |  |  |  | 240h | 240h |
| 411 | 1.4.4.17.1 | Определен состав отчетов | milestone | 0d | 2013-11-01 A | 2013-11-01 A |  | 100% |  | 2013-11-01 | 2013-11-01 | 0d |  | start no earlier than 2013-11-01 |  |  |  |
| 412 | 1.4.4.17.2 | Система готова к интеграции с модулем отчетов | milestone | 0d | 2013-11-01 A | 2013-11-01 A | 411 | 100% |  | 2013-11-01 | 2013-11-01 | 0d |  | start no earlier than 2013-09-30 | Денис Митавский [50%]; Андрей Цветков |  |  |
| 413 | 1.4.4.17.3 | JDBC-драйвер для системы построения отчётов |  | 10d | 2013-11-01 A | 2013-11-14 A | 59, 412 | 100% |  | 2013-11-01 | 2013-11-14 | 10d |  |  | (БТЛ) Михаил Ларин | 80h | 80h |
| 414 | 1.4.4.17.4 | Интеграция с Jasper Reports |  | 20d | 2013-11-15 A | 2013-12-12 A | 413, 74 | 100% |  | 2013-11-15 | 2013-12-12 | 20d |  |  | (БТЛ) Михаил Ларин | 160h | 160h |
| 415 | 1.4.4.17.5 | Принято решение о применении GWT-компонентов | milestone | 0d | 2013-07-22 A | 2013-07-22 A |  | 100% |  | 2013-07-22 | 2013-07-22 | 0d |  | start no earlier than 2013-07-22 |  |  |  |
| 416 | 1.4.4.17.6 | Адаптация компонентов GUI из СМ4 для наложения на архитектуру см5 |  | 30d | 2013-07-22 A | 2013-09-02 A | 415 | 100% |  | 2013-07-22 | 2013-09-02 | 30d |  | start no earlier than 2013-07-11 | Тимофей Билый; Алексей Львов | 480h | 480h |
| 417 | 1.4.4.17.7 | Изучение GWT/Настройка CMJ 4 для дебага |  | 4d | 2013-08-05 A | 2013-08-08 A |  | 100% |  | 2013-08-05 | 2013-08-08 | 4d |  | start no earlier than 2013-08-05 | Андрей Карандей | 32h | 32h |
| 418 | 1.4.4.17.8 | Разработка базовой архитектуры GUI на основе GWT-компонентов |  | 3d | 2013-07-22 A | 2013-07-24 A | 415 | 100% |  | 2013-07-22 | 2013-07-24 | 3d |  |  | Денис Митавский | 24h | 24h |
| 419 | 1.4.4.17.9 | Интеграция с JAAS/Аутентификация |  | 5d | 2013-07-31 A | 2013-08-06 A | 418 | 100% |  | 2013-07-31 | 2013-08-06 | 5d |  | start no earlier than 2013-07-08 | Денис Митавский | 40h | 40h |
| 420 | 1.4.4.17.10 | Архитектура разметки главного экрана |  | 2d | 2013-08-07 A | 2013-08-08 A | 419 | 100% |  | 2013-08-07 | 2013-08-08 | 2d |  |  | Денис Митавский [50%] | 8h | 8h |
| 421 | 1.4.4.17.11 | **Панель навигации** |  | 29d | 2013-08-09 A | 2013-09-18 |  | 85% | 4.35d | 2013-08-09 | 2013-09-18 | 29d | 254d |  |  | 56h | 46.4h |
| 422 | 1.4.4.17.11.1 | Проектирование - панель навигации |  | 2d | 2013-08-09 A | 2013-08-12 A | 420 | 100% |  | 2013-08-09 | 2013-08-12 | 2d |  |  | Денис Митавский [50%] | 8h | 8h |
| 423 | 1.4.4.17.11.2 | Разработка - панель навигации |  | 6d | 2013-09-11 A | 2013-09-18 | 422, 425 | 80% | 1.2d | 2013-09-11 | 2013-09-18 | 6d | 254d |  | Андрей Карандей | 48h | 38.4h |
| 424 | 1.4.4.17.12 | GUI - архитектура плагинов/дочерних плагинов. Базис |  | 15d | 2013-08-13 A | 2013-09-03 A | 422 | 100% |  | 2013-08-13 | 2013-09-03 | 15d |  |  | Денис Митавский | 120h | 120h |
| 425 | 1.4.4.17.13 | Базовая реализация архитектуры плагинов |  | 5d | 2013-09-04 A | 2013-09-10 A | 424 | 100% |  | 2013-09-04 | 2013-09-10 | 5d |  |  | Андрей Карандей | 40h | 40h |
| 426 | 1.4.4.17.14 | **GUI - плагин отображения коллекций** |  | 15d | 2013-09-04 A | 2013-09-24 A | 424 | 100% |  | 2013-09-04 | 2013-09-24 | 15d |  |  |  | 64h | 64h |
| 427 | 1.4.4.17.14.1 | Проектирование |  | 2d | 2013-09-04 A | 2013-09-05 A | 424 | 100% |  | 2013-09-04 | 2013-09-05 | 2d |  |  | Денис Митавский | 16h | 16h |
| 428 | 1.4.4.17.14.2 | Разработка |  | 6d | 2013-09-17 A | 2013-09-24 A | 434 | 100% |  | 2013-09-17 | 2013-09-24 | 6d |  |  | Ярослав Бондарчук | 48h | 48h |
| 429 | 1.4.4.17.15 | **GUI - действия** |  | 96d | 2013-04-22 A | 2013-09-09 A |  | 100% |  | 2013-04-22 | 2013-09-09 | 96d |  |  |  | 8h | 8h |
| 430 | 1.4.4.17.15.1 | Проектирование |  | 2d | 2013-09-06 A | 2013-09-09 A | 427 | 100% |  | 2013-09-06 | 2013-09-09 | 2d |  |  | Денис Митавский [50%] | 8h | 8h |
| 431 | 1.4.4.17.15.2 | Разработка |  | 6d | 2013-04-22 A | 2013-04-29 A |  | 100% |  | 2013-04-22 | 2013-04-29 | 6d |  |  |  |  |  |
| 432 | 1.4.4.17.16 | **Формы встроенного GUI** |  | 15d | 2013-09-10 A | 2013-09-30 A |  | 100% |  | 2013-09-10 | 2013-09-30 | 15d |  |  |  | 124h | 124h |
| 433 | 1.4.4.17.16.1 | Конфигурация-архитектура |  | 1d | 2013-09-10 A | 2013-09-10 A | 430 | 100% |  | 2013-09-10 | 2013-09-10 | 1d |  |  | Денис Митавский [50%] | 4h | 4h |
| 434 | 1.4.4.17.16.2 | Маппинг на объекты |  | 2d | 2013-09-13 A | 2013-09-16 A | 433 | 100% |  | 2013-09-13 | 2013-09-16 | 2d |  |  | Ярослав Бондарчук | 16h | 16h |
| 435 | 1.4.4.17.16.3 | API GWT client-server |  | 3d | 2013-09-13 A | 2013-09-17 A | 433 | 100% |  | 2013-09-13 | 2013-09-17 | 3d |  |  | Денис Митавский | 24h | 24h |
| 436 | 1.4.4.17.16.4 | Реализация чтения |  | 5d | 2013-09-24 A | 2013-09-30 A | 49 | 100% |  | 2013-09-24 | 2013-09-30 | 5d |  |  | Денис Митавский | 40h | 40h |
| 437 | 1.4.4.17.16.5 | Реализация сохранения |  | 5d | 2013-09-19 A | 2013-09-25 A | 423, 435 | 100% |  | 2013-09-19 | 2013-09-25 | 5d |  |  | Андрей Карандей | 40h | 40h |

Notes:
- 412: Используя язык запросов коллеций
- 413: Используя язык запросов коллеций

| ID | WBS | Task | Duration | Start | Finish | Predecessors | Complete | Remaining | Baseline start | Baseline finish | Baseline duration | Total slack | Free slack | Constraint | Resources | Work | Actual work |
| --- | --- | --- | --- | --- | --- | --- | --- | --- | --- | --- | --- | --- | --- | --- | --- | --- | --- |
| 438 | 1.4.4.17.17 | **GUI - поиск** | 32d | 2013-12-23 A | 2014-02-14 A |  | 100% |  | 2013-12-23 | 2014-02-14 | 32d |  |  |  |  | 256h | 256h |
| 439 | 1.4.4.17.17.1 | GUI - поиск. Проектирование | 20d | 2013-12-23 A | 2014-01-29 A |  | 100% |  | 2013-12-23 | 2014-01-29 | 20d |  |  | start no earlier than 2013-12-23 | Игорь Петров | 160h | 160h |
| 440 | 1.4.4.17.17.2 | GUI - поиск. Реализация | 12d | 2014-01-30 A | 2014-02-14 A | 439 | 100% |  | 2014-01-30 | 2014-02-14 | 12d |  |  |  | Игорь Петров | 96h | 96h |
| 441 | 1.4.4.17.18 | **GUI - виджеты разработка** | 181d | 2013-10-01 A | 2014-06-25 |  | 5% | 171.47d | 2013-10-01 | 2014-06-25 | 181d | 32d |  |  |  | 760h | 40h |
| 442 | 1.4.4.17.18.1 | Дата/время | 5d | 2013-10-01 A | 2013-10-07 A | 436 | 100% |  | 2013-10-01 | 2013-10-07 | 5d |  |  |  | Тимофей Билый | 40h | 40h |
| 443 | 1.4.4.17.18.2 | Остальные без особенностей стиля ст.лебедева (базовый набор) | 50d | 2014-02-17 | 2014-04-25 | 436, 440, 414 |  |  | 2014-02-17 | 2014-04-25 | 50d | 32d | 0d |  | Денис Митавский | 400h |  |
| 444 | 1.4.4.17.18.3 | Остальные для стиля ст.лебедева | 40d | 2014-04-28 | 2014-06-25 | 443 |  |  | 2014-04-28 | 2014-06-25 | 40d | 32d | 0d |  | Денис Митавский | 320h |  |
| 445 | 1.4.4.17.19 | **GUI - брендинг, стилизация, темы** | 33d | 2014-06-26 | 2014-08-11 |  |  |  | 2014-06-26 | 2014-08-11 | 33d | 32d |  |  |  | 132h |  |
| 446 | 1.4.4.17.19.1 | Концепция | 10d | 2014-06-26 | 2014-07-09 | 439, 443, 444 |  |  | 2014-06-26 | 2014-07-09 | 10d | 32d | 0d |  | Денис Митавский [50%] | 40h |  |
| 447 | 1.4.4.17.19.2 | Реализация | 23d | 2014-07-10 | 2014-08-11 | 446 |  |  | 2014-07-10 | 2014-08-11 | 23d | 32d |  |  | Денис Митавский [50%] | 92h |  |
| 448 | 1.4.4.18 | Тестирование производительности конфигурации | 25d | 2013-09-10 A | 2013-10-14 A | 429 | 100% |  | 2013-09-10 | 2013-10-14 | 25d |  |  |  | (БТЛ)Сергей Степыгин; (БТЛ) Дмитрий Лякин | 400h | 400h |
| 449 | 1.4.4.19 | **Дополнительные сервисы платформы** | 167d | 2013-12-09 A | 2014-08-13 |  | 53% | 77.93d | 2013-12-09 | 2014-08-13 | 167d | 32d |  |  |  | 1352h | 704h |
| 450 | 1.4.4.19.1 | Расширение функциональности DAO (требования CMJ4.1, базовые требования) | 30d | 2013-12-09 A | 2014-01-29 A | 36, 398 | 100% |  | 2013-12-09 | 2014-01-29 | 30d |  |  |  | Валерий Мацукевич | 240h | 240h |
| 451 | 1.4.4.19.2 | Защита конфигурационных файлов от изменений | 21d | 2014-01-30 A | 2014-02-27 A | 450 | 100% |  | 2014-01-30 | 2014-02-27 | 21d |  |  |  | Валерий Мацукевич | 168h | 168h |
| 452 | 1.4.4.19.3 | Выделение конфигурации GUI в отдельные сущности, к изменению формата которых система не будет восприимчива | 20d | 2014-02-28 A | 2014-03-27 | 451 | 5% | 19d | 2014-02-28 | 2014-03-27 | 20d | 73d | 0d |  | Валерий Мацукевич | 160h | 8h |
| 453 | 1.4.4.19.4 | Версионность/аудит | 20d | 2014-03-28 | 2014-04-24 | 451, 452 |  |  | 2014-03-28 | 2014-04-24 | 20d | 65d | 0d |  | Валерий Мацукевич | 160h |  |
| 454 | 1.4.4.19.5 | Блокировки бизнес-объектов | 21d | 2014-04-25 | 2014-05-28 | 453 |  |  | 2014-04-25 | 2014-05-28 | 21d | 65d | 0d |  | Валерий Мацукевич | 168h |  |
| 455 | 1.4.4.19.6 | Уточнение состава и сроков работ | 2d | 2014-08-12 | 2014-08-13 |  |  |  | 2014-08-12 | 2014-08-13 | 2d | 24d |  |  | Андрей Пирожков; Денис Митавский; Тугушев Илья | 48h |  |
| 456 | 1.4.4.19.7 | Кросс-СУБД, поддержка Oracle | 20d | 2014-05-29 A | 2014-06-25 A | 454 | 100% |  | 2014-05-29 | 2014-06-25 | 20d |  |  |  | Валерий Мацукевич | 160h | 160h |
| 457 | 1.4.4.19.8 | SQL-trace | 16d | 2014-06-26 A | 2014-07-17 A | 456 | 100% |  | 2014-06-26 | 2014-07-17 | 16d |  |  |  | Валерий Мацукевич | 128h | 128h |
| 458 | 1.4.4.19.9 | Локализация (на уровне конфигурации) | 15d | 2014-07-18 | 2014-08-07 | 457 |  |  | 2014-07-18 | 2014-08-07 | 15d | 31d |  |  | Сергей Околот | 120h |  |
| 459 | 1.4.4.20 | **Интеграция с системой управления учетными записями** | 14d | 2014-05-29 | 2014-06-17 | 454 |  |  | 2014-05-29 | 2014-06-17 | 14d | 73d |  |  |  | 56h |  |
| 460 | 1.4.4.20.1 | Интеграция с ActiveDirectory | 14d | 2014-05-29 | 2014-06-17 |  |  |  | 2014-05-29 | 2014-06-17 | 14d | 65d |  |  | Андрей Пирожков [50%] | 56h |  |
| 461 | 1.4.4.21 | **Расширение функций сервиса конфигурации** | 128d | 2013-07-09 A | 2014-01-14 A | 456 | 100% |  | 2013-07-09 | 2014-01-14 | 128d |  |  |  |  | 352h | 352h |
| 462 | 1.4.4.21.1 | Расширяемость конфигурации | 12d | 2013-07-09 A | 2013-12-11 A |  | 100% |  | 2013-07-09 | 2013-12-11 | 12d |  |  |  | Валерий Мацукевич | 96h | 96h |
| 463 | 1.4.4.21.2 | Изменение и дополнение конфигурации системы | 16d | 2013-12-12 A | 2014-01-14 A | 462 | 100% |  | 2013-12-12 | 2014-01-14 | 16d |  |  |  | Андрей Пирожков; Роман Митинков | 256h | 256h |

Notes:
- 448: - полноценное, продуманное, конфигурируемое, полностью автоматизированное (вплоть до промежуточного сбора статистики в СУБД перед запуском тестов производительности) с автоматической генерацией таблиц и графиков, с поддержкой нагружающих потоков и т.п.
- 453: История модификации объекта / Версионность - на бизнес слой
- 456: Кросс-СУБД, поддержка Oracle
- 458: Поддержка ресурсных файлов - в расках конфигурирования ресурсных файлов / Подмена языка в интерфейсе (передача локали пользоввателю) -

| ID | WBS | Task | Type | Duration | Start | Finish | Predecessors | Complete | Remaining | Baseline start | Baseline finish | Baseline duration | Total slack | Free slack | Constraint | Resources | Work | Actual work |
| --- | --- | --- | --- | --- | --- | --- | --- | --- | --- | --- | --- | --- | --- | --- | --- | --- | --- | --- |
| 464 | 1.4.4.22 | **Сервис для работы с системным журналом** |  | 15d | 2014-01-15 A | 2014-02-04 | 463 | 67% | 5d | 2014-01-15 | 2014-02-04 | 15d | 165d |  |  |  | 120h | 80h |
| 465 | 1.4.4.22.1 | Ведение журнала действий пользователей и действий с объектами системы |  | 10d | 2014-01-15 A | 2014-01-28 A |  | 100% |  | 2014-01-15 | 2014-01-28 | 10d |  |  |  | (БТЛ) Михаил Ларин | 80h | 80h |
| 466 | 1.4.4.22.2 | Настройка уровня логирования |  | 5d | 2014-01-29 | 2014-02-04 | 465 |  |  | 2014-01-29 | 2014-02-04 | 5d | 160d |  |  | Андрей Карандей | 40h |  |
| 467 | 1.4.4.23 | **Подсистема нотификаций** |  | 60d | 2014-01-20 A | 2014-04-11 |  | 13% | 52.39d | 2014-01-20 | 2014-04-02 | 53d | 47d | 0d |  |  | 844h | 85h |
| 468 | 1.4.4.23.1 | Описание принципов устройства и функционирования подсистемы нотификаций |  | 10d | 2014-01-20 A | 2014-01-31 |  | 50% | 5d | 2014-01-20 | 2014-01-31 | 10d | 39d | 0d |  | Андрей Пирожков | 80h | 40h |
| 469 | 1.4.4.23.2 | Подготовка проекта подсистемы нотификаций |  | 24d | 2014-02-03 | 2014-03-06 | 468 |  |  | 2014-02-03 | 2014-02-25 | 17d | 39d | 0d |  | Андрей Пирожков; (БТЛ) Михаил Ларин | 384h |  |
| 470 | 1.4.4.23.3 | **Разработка подсистемы** |  | 20d | 2014-03-17 A | 2014-04-11 |  | 11% | 17.86d | 2014-03-06 | 2014-04-02 | 20d | 47d |  |  |  | 380h | 45h |
| 471 | 1.4.4.23.3.1 | Доработка существующих сервисов |  | 15d | 2014-03-17 A | 2014-04-04 | 469FS+6d | 25% | 11.25d | 2014-03-06 | 2014-03-26 | 15d | 47d | 0d |  | (БТЛ) Михаил Ларин [50%]; Андрей Цветков | 140h | 45h |
| 472 | 1.4.4.23.3.2 | Разработка специфичного функционала подсистемы |  | 15d | 2014-03-17 | 2014-04-04 | 471SS |  |  | 2014-03-06 | 2014-03-26 | 15d | 47d | 0d |  | Ардабьев Илья | 120h |  |
| 473 | 1.4.4.23.3.3 | Сборка и отладка |  | 5d | 2014-04-07 | 2014-04-11 | 471, 472 |  |  | 2014-03-27 | 2014-04-02 | 5d | 42d |  |  | (БТЛ) Михаил Ларин; Андрей Цветков; Роман Митинков | 120h |  |
| 474 | 1.4.5 | **Архитектурный комитет** |  | 264d | 2013-06-11 A | 2014-06-30 | 15 | 49% | 134d | 2013-06-11 | 2014-06-30 | 264d | 64d |  |  |  | 2524h | 1535.2h |
| 475 | 1.4.5.1 | Контроль и корректировка технических решений "Архитектурный комитет" |  | 264d | 2013-06-11 A | 2014-06-30 |  | 49% | 134d | 2013-06-11 | 2014-06-30 | 264d | 56d |  |  | Тугушев Илья [20%]; Андрей Пирожков [23.2%]; Денис Митавский [20%]; WEB-дизайнер [20%]; Аналитик [20%]; Владимир Панов [50%] | 2524h | 1535.2h |
| 476 | 1.4.6 | **Средства мониторинга** |  | 33d | 2014-03-31 A | 2014-05-19 |  |  | 33d | 2014-03-05 | 2014-04-18 | 33d | 94d |  |  |  | 384h |  |
| 477 | 1.4.6.1 | уточнена постановка | milestone | 0d | 2014-03-31 A | 2014-03-31 A |  | 100% |  | 2014-03-05 | 2014-03-05 | 0d |  |  | start no earlier than 2014-03-31 |  |  |  |
| 478 | 1.4.6.2 | **Проектирование и формализация** |  | 6d | 2014-03-31 | 2014-04-07 |  |  |  | 2014-03-05 | 2014-03-12 | 6d | 94d |  |  |  | 48h |  |
| 479 | 1.4.6.2.1 | Определение параметров контроля |  | 3d | 2014-03-31 | 2014-04-02 | 477 |  |  | 2014-03-05 | 2014-03-07 | 3d | 86d | 0d |  | Андрей Пирожков | 24h |  |
| 480 | 1.4.6.2.2 | Разработка методики контроля |  | 3d | 2014-04-03 | 2014-04-07 | 479 |  |  | 2014-03-10 | 2014-03-12 | 3d | 86d | 0d |  | Андрей Пирожков | 24h |  |
| 481 | 1.4.6.3 | **Реализация** |  | 27d | 2014-04-08 | 2014-05-19 |  |  |  | 2014-03-13 | 2014-04-18 | 27d | 94d |  |  |  | 336h |  |
| 482 | 1.4.6.3.1 | Определение точек контроля системы |  | 7d | 2014-04-08 | 2014-04-16 | 480 |  |  | 2014-03-13 | 2014-03-21 | 7d | 86d | 0d |  | Андрей Пирожков | 56h |  |
| 483 | 1.4.6.3.2 | Разработка счетчиков точек контроля |  | 15d | 2014-04-17 | 2014-05-12 | 482 |  |  | 2014-03-24 | 2014-04-11 | 15d | 86d | 0d |  | Андрей Пирожков; Java разработчик4 | 240h |  |
| 484 | 1.4.6.3.3 | Сборка "zabbix" |  | 5d | 2014-05-13 | 2014-05-19 | 483 |  |  | 2014-04-14 | 2014-04-18 | 5d | 86d |  |  | Java разработчик4 | 40h |  |
| 485 | 1.4.7 | **Стабилизация ядра системы** |  | 67d | 2014-04-14 | 2014-07-18 |  |  |  | 2014-04-03 | 2014-07-09 | 67d | 47d |  |  |  | 1632h |  |
| 486 | 1.4.7.1 | Исправление ошибок в ядре |  | 70d | 2014-04-14 | 2014-07-18 | 467 |  |  | 2014-04-03 | 2014-07-09 | 70d | 42d |  |  | Андрей Цветков [50%]; Валерий Мацукевич [50%]; Роман Митинков [50%] | 816h |  |
| 487 | 1.4.7.2 | Доработка недостающего функционала |  | 70d | 2014-04-14 | 2014-07-18 | 467 |  |  | 2014-04-03 | 2014-07-09 | 70d | 42d |  |  | Андрей Цветков [50%]; Валерий Мацукевич [50%]; Роман Митинков [50%] | 816h |  |

Notes:
- 464: Сервис для работы с системным журналомВедение журнала действий пользователей и действий с объектами системы
- 465: Ведение журнала действий пользователей и действий с объектами системы

| ID | WBS | Task | Type | Duration | Start | Finish | Predecessors | Complete | Remaining | Baseline start | Baseline finish | Baseline duration | Total slack | Free slack | Constraint | Resources | Work | Actual work |
| --- | --- | --- | --- | --- | --- | --- | --- | --- | --- | --- | --- | --- | --- | --- | --- | --- | --- | --- |
| 488 | 1.4.8 | **Разработка Форм для АРМ тематических администраторов** |  | 121.75d | 2013-12-23 A | 2014-06-25 | 70 | 22% | 94.75d | 2013-12-23 | 2014-06-25 | 121.75d | 67d |  |  |  | 880h | 204h |
| 489 | 1.4.8.1 | Предварительный Сбор и подготовка требований |  | 20d | 2013-12-23 A | 2014-01-30 A |  | 100% |  | 2013-12-23 | 2014-01-30 | 20d |  |  |  | Пестова Ольга (Киев) | 160h | 160h |
| 490 | 1.4.8.2 | Уточнение стребований к АРМ тематичесхких админов |  | 30d | 2014-02-10 A | 2014-03-21 |  | 18% | 24.5d | 2014-02-10 | 2014-03-21 | 30d | 62d | 0d | start no earlier than 2014-02-10 | Тимофей Щербатый | 240h | 44h |
| 491 | 1.4.8.3 | **Подготовка работы со списками значений** |  | 30d | 2014-03-24 | 2014-05-06 |  |  |  | 2014-03-24 | 2014-05-06 | 30d | 67d |  |  |  | 240h |  |
| 492 | 1.4.8.3.1 | Разработка функционала учета организационно штатной структуры |  | 10d | 2014-03-24 | 2014-04-04 | 490 |  |  | 2014-03-24 | 2014-04-04 | 10d | 62d | 0d |  | Ярослав Бондарчук | 80h |  |
| 493 | 1.4.8.3.2 | Разработка функционала с рубрикаторами (сложные справочники) |  | 10d | 2014-04-07 | 2014-04-18 | 492 |  |  | 2014-04-07 | 2014-04-18 | 10d | 62d | 0d |  | Ярослав Бондарчук | 80h |  |
| 494 | 1.4.8.3.3 | Разработка функционала для работы с словарями данных (простые, линейные справочники) |  | 10d | 2014-04-21 | 2014-05-06 | 493 |  |  | 2014-04-21 | 2014-05-06 | 10d | 62d | 0d |  | Ярослав Бондарчук | 80h |  |
| 495 | 1.4.8.4 | Разработка форм для работы в GUI (настройки форм) |  | 10d | 2014-05-07 | 2014-05-21 | 494 |  |  | 2014-05-07 | 2014-05-21 | 10d | 62d | 0d |  | Ярослав Бондарчук | 80h |  |
| 496 | 1.4.8.5 | Разработка структуры рабочего места АРМ |  | 5d | 2014-05-22 | 2014-05-28 | 495 |  |  | 2014-05-22 | 2014-05-28 | 5d | 62d | 0d |  |  |  |  |
| 497 | 1.4.8.6 | Разработка специфичных для форм АРМ элементов GUI |  | 20d | 2014-05-29 | 2014-06-25 | 496 |  |  | 2014-05-29 | 2014-06-25 | 20d | 62d |  |  | Ярослав Бондарчук | 160h |  |
| 498 | 1.4.9 | **Подготовка базового набора отчетов и ГО** |  | 112d | 2014-02-10 | 2014-07-18 |  |  |  | 2014-02-10 | 2014-07-16 | 110d | 0d |  |  |  | 960h |  |
| 499 | 1.4.9.1 | Данные для подготовки базового набора отчетов собраны | milestone | 0d | 2014-02-10 | 2014-02-10 |  |  |  | 2014-02-10 | 2014-02-10 | 0d | 17d | 0d | start no earlier than 2014-02-10 |  |  |  |
| 500 | 1.4.9.2 | Структура данных для отчетов подготовлена и описана | milestone | 0d | 2014-02-10 | 2014-02-10 | 499 |  |  | 2014-02-10 | 2014-02-10 | 0d | 44d | 0d |  |  |  |  |
| 501 | 1.4.9.3 | Механизм управления отчетными формами подготовлен | milestone | 0d | 2014-02-10 | 2014-02-10 | 500 |  |  | 2014-02-10 | 2014-02-10 | 0d | 17d | 0d |  |  |  |  |
| 502 | 1.4.9.4 | Уточнение требований по шаблонам отчетов |  | 20d | 2014-02-10 | 2014-03-07 | 501 |  |  | 2014-02-10 | 2014-03-07 | 20d | 17d | 0d |  | Евгения Капустина [50%] | 80h |  |
| 503 | 1.4.9.5 | Требования по отображению отчетов сформированы | milestone | 0d | 2014-03-07 | 2014-03-07 | 502 |  |  | 2014-03-07 | 2014-03-07 | 0d | 44d | 0d |  |  |  |  |
| 504 | 1.4.9.6 | **Проектирование "генератора отчетов"** |  | 0d | 2014-03-24 | 2014-03-24 |  |  |  |  |  |  | 0d |  |  |  |  |  |
| 505 | 1.4.9.6.1 | Проектировнаие подсистемы отчетов выполнено | milestone | 0d | 2014-03-24 | 2014-03-24 |  |  |  |  |  |  | 0d |  | start no earlier than 2014-03-24 |  |  |  |
| 506 | 1.4.9.7 | **GUI для отчетов** |  | 30d | 2014-04-01 | 2014-05-16 |  |  |  |  |  |  | 0d |  |  |  | 240h |  |
| 507 | 1.4.9.7.1 | Подсистема отчетов спроектирована | milestone | 0d | 2014-04-01 | 2014-04-01 | 505FS+7d |  |  |  |  |  | 0d |  |  |  |  |  |
| 508 | 1.4.9.7.2 | GUI - отображение отчётов |  | 30d | 2014-04-02 | 2014-05-16 | 503, 505, 507 |  |  | 2014-03-10 | 2014-03-28 | 15d | 0d |  |  | Леся Пуховая | 240h |  |
| 509 | 1.4.9.8 | **Разработка шаблонов** |  | 42d | 2014-05-21 | 2014-07-18 |  |  |  |  |  |  | 0d |  |  |  | 640h |  |
| 510 | 1.4.9.8.1 | Задача по шаблоноам поставлена | milestone | 0d | 2014-05-21 | 2014-05-21 | 508FS+3d |  |  |  |  |  | 0d |  |  |  |  |  |
| 511 | 1.4.9.8.2 | Подготовка шаблонов типовых отчетов |  | 40d | 2014-05-26 | 2014-07-18 | 510FS+2d |  |  | 2014-03-10 | 2014-05-06 | 40d | 0d |  |  | (БТЛ) Дмитрий Лякин; Антон Ганчев (Киев) | 640h |  |
| 512 | 1.4.10 | Сопряжение с мобильным клиентом СМ4 |  | 50d | 2014-07-21 | 2014-09-26 | 511 |  |  | 2014-05-07 | 2014-07-16 | 50d | 0d |  |  | Java разработчик3 | 400h |  |

| ID | WBS | Task | Type | Duration | Start | Finish | Predecessors | Baseline start | Baseline finish | Baseline duration | Total slack | Free slack | Constraint | Resources | Work |
| --- | --- | --- | --- | --- | --- | --- | --- | --- | --- | --- | --- | --- | --- | --- | --- |
| 513 | 1.4.11 | **Тестирование** |  | 358d? | 2013-04-19 | 2014-09-24 |  | 2014-03-19 | 2014-07-14 | 81d? | 2d | 0d |  |  | 2544h |
| 514 | 1.4.11.1 | **Функциональное тестирование** |  | 343d? | 2013-04-19 | 2014-09-03 |  | 2014-03-19 | 2014-06-23 | 66d? | 17d |  |  |  | 2224h |
| 515 | 1.4.11.1.1 | Подготовка ПМИ |  | 5d | 2013-04-19 | 2013-04-25 |  | 2014-03-19 | 2014-03-25 | 5d | 292d | 0d |  | Тест Аналитик | 40h |
| 516 | 1.4.11.1.2 | Разработка "сценариев тестирования" |  | 15d | 2013-04-19 | 2013-05-16 |  | 2014-03-19 | 2014-04-08 | 15d | 297d | 290d |  | Тест Аналитик | 120h |
| 517 | 1.4.11.1.3 | Разработка модели нагрузки для тестирования |  | 10d | 2013-04-26 | 2013-05-16 | 515 | 2014-03-26 | 2014-04-08 | 10d | 292d | 285d |  | Тест Аналитик | 80h |
| 518 | 1.4.11.1.4 | Адаптация автоматизированных сценариев от СМ4 для создания нагрузки |  | 25d | 2013-04-26 | 2013-06-06 | 515 | 2014-03-26 | 2014-04-29 | 25d | 287d | 285d |  | Влад Симоненко | 200h |
| 519 | 1.4.11.1.5 | **Проведение тестирования** |  | 38d? | 2014-07-14 | 2014-09-03 | 516, 517 | 2014-04-28 | 2014-06-23 | 38d? | 7d |  |  |  | 1784h |
| 520 | 1.4.11.1.5.1 | **Подготовка среды тестирования** |  | 15d? | 2014-07-14 | 2014-08-01 |  | 2014-04-28 | 2014-05-21 | 15d? | 7d |  |  |  | 200h |
| 521 | 1.4.11.1.5.1.1 | Разворачивание системы |  | 5d? | 2014-07-14 | 2014-07-21 | 523SF | 2014-04-28 | 2014-05-07 | 5d? | 50d | 0d |  | Влад Симоненко | 40h |
| 522 | 1.4.11.1.5.1.2 | Система готова для подключения инструментов мониторинга | milestone | 0d | 2014-07-21 | 2014-07-21 | 521 | 2014-05-07 | 2014-05-07 | 0d | 50d |  |  |  |  |
| 523 | 1.4.11.1.5.1.3 | Наполнение данными |  | 10d? | 2014-07-21 | 2014-08-01 | 511 | 2014-05-07 | 2014-05-21 | 10d? | 2d | 0d |  | Влад Симоненко; Java разработчик6 | 160h |
| 524 | 1.4.11.1.5.2 | Среда тестирования готова | milestone | 0d | 2014-08-01 | 2014-08-01 | 523, 518 | 2014-05-21 | 2014-05-21 | 0d | 2d | 0d | start no earlier than 2012-05-24 |  |  |
| 525 | 1.4.11.1.5.3 | Проведение тестирования |  | 10d | 2014-08-04 | 2014-08-15 | 524 | 2014-05-22 | 2014-06-04 | 10d | 2d | 0d |  | Тест Аналитик; Тестировщик [200%] | 240h |
| 526 | 1.4.11.1.5.4 | **Обработка результатов тестирования и внесение изменений в модуль** |  | 15d | 2014-08-14 | 2014-09-03 | 525FS-2d | 2014-06-03 | 2014-06-23 | 15d | 2d |  |  |  | 1344h |
| 527 | 1.4.11.1.5.4.1 | Устранение замечаний по результатам функционального тестирования |  | 15d | 2014-08-14 | 2014-09-03 |  | 2014-06-03 | 2014-06-23 | 15d | 2d | 0d |  | Java разработчик5; Влад Симоненко [300%]; Валерий Мацукевич; Java разработчик3; Java разработчик4; Андрей Карандей; Алексей Львов; Андрей Цветков | 1200h |
| 528 | 1.4.11.1.5.4.2 | Проверка устранения замечаний |  | 6d | 2014-08-27 | 2014-09-03 | 527FS-6d | 2014-06-16 | 2014-06-23 | 6d | 2d | 0d |  | Тест Аналитик; Тестировщик [200%] | 144h |
| 529 | 1.4.11.2 | **Нагрузочное тестирование** |  | 28d | 2014-08-15 | 2014-09-24 | 515 | 2014-06-04 | 2014-07-14 | 28d | 2d |  |  |  | 320h |
| 530 | 1.4.11.2.1 | Стенд для нагрузочного тестирования подготовлен | milestone | 0d | 2014-08-15 | 2014-08-15 | 525 | 2014-06-04 | 2014-06-04 | 0d | 15d | 13d | finish no earlier than 2012-06-09 |  |  |
| 531 | 1.4.11.2.2 | Проведения нагрузочного тестирования |  | 10d | 2014-09-04 | 2014-09-17 | 528, 518, 530 | 2014-06-24 | 2014-07-07 | 10d | 2d | 0d |  | Влад Симоненко; Тест Аналитик; Тестировщик | 240h |
| 532 | 1.4.11.2.3 | Обработка результатов нагрузочного тестирования |  | 5d | 2014-09-18 | 2014-09-24 | 531 | 2014-07-08 | 2014-07-14 | 5d | 2d |  |  | Тест Аналитик; Тестировщик | 80h |
| 533 | 1.4.12 | **Разработка установочного комплекта** |  | 6d | 2014-05-05 | 2014-05-13 |  |  |  |  | 98d |  |  |  | 48h |
| 534 | 1.4.12.1 | Создание конфигурации для EAP 6.2 |  | 4d | 2014-05-05 | 2014-05-08 |  |  |  |  | 93d | 0d | start no earlier than 2014-05-05 | (БТЛ) Михаил Ларин | 32h |
| 535 | 1.4.12.2 | Получение средств для развертывания Jboss |  | 2d | 2014-05-12 | 2014-05-13 | 534 |  |  |  | 93d |  |  | (БТЛ) Михаил Ларин | 16h |
| 536 | 1.4.13 | **Подготовка документации** |  | 80d | 2013-04-19 | 2013-08-15 | 513SS | 2014-03-19 | 2014-07-11 | 80d | 280d |  |  |  | 640h |
| 537 | 1.4.13.1 | Разработка документа "Концепция системы " |  | 40d | 2013-04-19 | 2013-06-20 |  | 2014-03-19 | 2014-05-16 | 40d | 275d | 0d |  | Владимир Панов | 320h |
| 538 | 1.4.13.2 | Разработка "Software Architecture Document" |  | 40d | 2013-06-21 | 2013-08-15 | 537 | 2014-05-19 | 2014-07-11 | 40d | 275d | 0d |  | Владимир Панов | 320h |
| 539 | 1.4.13.3 | Документы подготовлены | milestone | 0d | 2013-08-15 | 2013-08-15 | 538 | 2014-07-11 | 2014-07-11 | 0d | 275d |  |  |  |  |
